# Veazy_Project Schedule_v1.2_EN

How a schedule from MS Project changed from version to version. A marks actual dates.

## Version 1 (saved 2016-07-30, file Veazy_Project Schedule_v1.2.mpp)

Note of the change: Complete report 1

| ID | WBS | Task | Duration | Start | Finish | Predecessors | Total float | Constraint |
| --- | --- | --- | --- | --- | --- | --- | --- | --- |
| 1 | 1 | **Veazy** | 80d | 2016-05-09 08:00 | 2016-08-26 17:00 |  |  |  |
| 2 | 1.1 | **Initiation** | 12.5d | 2016-05-09 08:00 | 2016-05-25 12:00 |  | 1.5d |  |
| 3 | 1.1.1 | **Form up** | 0.5d | 2016-05-09 08:00 | 2016-05-09 12:00 |  | 1.5d |  |
| 4 |  | Form up team roles | 0.25d | 2016-05-09 08:00 | 2016-05-09 10:00 |  | 1.5d | start no earlier than 2016-05-09 08:00 |
| 5 |  | Uniform idea meeting | 0.25d | 2016-05-09 10:00 | 2016-05-09 12:00 | 4 | 1.5d |  |
| 6 | 1.1.2 | **Project Clarification** | 1d | 2016-05-09 13:00 | 2016-05-10 12:00 |  | 1.5d |  |
| 7 |  | Clarify project scope | 0.1d | 2016-05-09 13:00 | 2016-05-09 13:48 | 5 | 1.5d |  |
| 8 |  | Clarify technical requirements | 0.1d | 2016-05-09 13:48 | 2016-05-09 14:36 | 7 | 1.5d |  |
| 9 |  | Clarify rules in Team | 0.1d | 2016-05-09 14:36 | 2016-05-09 15:24 | 8 | 1.5d |  |
| 10 |  | Clarify working environments | 0.1d | 2016-05-09 15:24 | 2016-05-09 16:12 | 9 | 1.5d |  |
| 11 |  | Develop communications plan | 0.1d | 2016-05-09 16:12 | 2016-05-09 17:00 | 10 | 1.5d |  |
| 12 |  | List project features | 0.5d | 2016-05-10 08:00 | 2016-05-10 12:00 | 11 | 1.5d | start no earlier than 2016-05-10 08:00 |
| 13 |  | Initiate Project structure | 0.5d | 2016-05-10 08:00 | 2016-05-10 12:00 | 11 | 1.5d |  |
| 14 | 1.1.3 | **Environment** | 1d | 2016-05-10 13:00 | 2016-05-11 12:00 | 6 | 2d |  |
| 15 |  | Create guideline of installing and using environments | 2h | 2016-05-10 13:00 | 2016-05-10 15:00 | 12 | 1.5d |  |
| 16 |  | Setup Git Bash | 0.5h | 2016-05-10 15:00 | 2016-05-10 15:30 | 15 | 1.5d |  |
| 17 |  | Setup Eclipse & Plugin | 2h | 2016-05-10 15:30 | 2016-05-11 08:30 | 16 | 1.5d |  |
| 18 |  | Setup Postgresql Server | 1.5h | 2016-05-11 08:30 | 2016-05-11 10:00 | 17 | 1.5d |  |
| 19 |  | Training environments meeting | 2h | 2016-05-11 10:00 | 2016-05-11 12:00 | 18 | 1.5d |  |
| 20 | 1.1.4 | **Technology research** | 3d | 2016-05-11 13:00 | 2016-05-16 12:00 | 14 | 8d |  |
| 21 |  | Research technologies to be used in project | 1d | 2016-05-11 13:00 | 2016-05-12 12:00 |  | 3.5d |  |
| 22 |  | Study SpringMVC & Hibernate | 2d | 2016-05-12 13:00 | 2016-05-16 12:00 | 21 | 3.5d |  |
| 23 |  | Study AngularJS, jQuery, Bootstrap | 2d | 2016-05-12 13:00 | 2016-05-16 12:00 | 21 | 3.5d | start no earlier than 2016-05-12 08:00 |
| 24 | 1.1.5 | **Project Introduction** | 4d | 2016-05-12 08:00 | 2016-05-17 17:00 | 14 | 1.5d |  |
| 25 |  | Create "Project Introduction" document | 2d | 2016-05-12 08:00 | 2016-05-13 17:00 |  | 1.5d | finish no earlier than 2016-05-13 17:00 |
| 26 |  | Review "Project Introduction" document | 0.5d | 2016-05-16 08:00 | 2016-05-16 12:00 | 25 | 1d |  |
| 27 |  | Update "Project Introduction" document draft | 0.5d | 2016-05-16 13:00 | 2016-05-16 17:00 | 26 | 1d |  |
| 28 |  | Update "Project Introduction" based on instructor's comments | 1d | 2016-05-17 08:00 | 2016-05-17 17:00 | 27 | 1d |  |
| 29 |  | Summit Project Introduction | 0d | 2016-05-17 17:00 | 2016-05-17 17:00 | 28 | 1d |  |
| 30 | 1.1.6 | **Project Plan** | 5.5d | 2016-05-11 13:00 | 2016-05-18 17:00 | 14 | 5.5d |  |
| 31 |  | Develop project definition | 0.5d | 2016-05-11 13:00 | 2016-05-11 17:00 | 14 | 6d |  |
| 32 |  | Create CM Plan document | 0.5d | 2016-05-11 13:00 | 2016-05-11 17:00 | 14 | 6d |  |
| 33 |  | Develop Risk Register | 0.5d | 2016-05-11 13:00 | 2016-05-11 17:00 | 14 | 6d |  |
| 34 |  | Create Project plan document | 2d | 2016-05-11 13:00 | 2016-05-13 12:00 | 14 | 5.5d |  |
| 35 |  | Create Work BreakDown Structure | 0.5d | 2016-05-13 13:00 | 2016-05-13 17:00 | 34 | 5.5d |  |
| 36 |  | Create Project schedule document | 2d | 2016-05-16 08:00 | 2016-05-17 17:00 | 35 | 5.5d |  |
| 37 |  | Review & get comment of Project Plan | 0.5d | 2016-05-18 08:00 | 2016-05-18 12:00 | 36 | 5.5d |  |
| 38 |  | Update Project Plan documents (Schedule, Project Plan in MS Word, CM Plan) | 0.5d | 2016-05-18 13:00 | 2016-05-18 17:00 | 37 | 5.5d |  |
| 39 |  | Summit Project Plan Final version | 0d | 2016-05-18 17:00 | 2016-05-18 17:00 | 38 | 5.5d |  |
| 40 |  | Kick-off meeting | 0.5d | 2016-05-18 08:00 | 2016-05-18 12:00 | 24 | 6d |  |
| 41 | 1.1.8 | **Q&A sheet** | 1d | 2016-05-18 13:00 | 2016-05-19 12:00 | 24 | 5d |  |
| 42 |  | Create Q&A | 0.5d | 2016-05-18 13:00 | 2016-05-18 17:00 | 40 | 0.5d |  |
| 43 |  | Update Q&A sheet | 0.5d | 2016-05-19 08:00 | 2016-05-19 12:00 | 42 | 0.5d |  |
| 44 |  | Translate Q&A sheet | 0.5d | 2016-05-19 08:00 | 2016-05-19 12:00 | 42 | 0.5d |  |
| 45 | 1.1.9 | **Requirement** | 5d | 2016-05-18 08:00 | 2016-05-24 17:00 | 24 | 1d |  |
| 46 | 1.1.9.1 | **User Requirement** | 2.5d | 2016-05-18 08:00 | 2016-05-20 12:00 |  | 1d |  |
| 47 |  | Develop brief "User Requirements Specification" document | 1d | 2016-05-18 08:00 | 2016-05-18 17:00 |  | 1d |  |
| 48 |  | Peer review brief "User Requirements Specification" document | 0.5d | 2016-05-19 08:00 | 2016-05-19 12:00 | 47 | 1d |  |
| 49 |  | Update brief "User Requirements Specification" document | 0.5d | 2016-05-20 08:00 | 2016-05-20 12:00 | 48 | 0.5d | start no earlier than 2016-05-20 08:00 |
| 50 | 1.1.9.2 | **Mock-up screens** | 2.5d | 2016-05-20 13:00 | 2016-05-24 17:00 | 46 | 1d |  |
| 51 |  | Collect business requirements and processes | 0.5d | 2016-05-20 13:00 | 2016-05-20 17:00 |  | 0.5d |  |
| 52 |  | Develop main features' mockup screens | 1.5d | 2016-05-23 08:00 | 2016-05-24 12:00 | 51 | 0.5d |  |
| 53 |  | Review and edit screen main features' mockup screens | 0.5d | 2016-05-24 13:00 | 2016-05-24 17:00 | 52 | 0.5d |  |
| 54 |  | Complete main features' mockup screens | 0d | 2016-05-24 17:00 | 2016-05-24 17:00 | 53 | 2d |  |
| 55 |  | Phase meeting | 0.5d | 2016-05-25 08:00 | 2016-05-25 12:00 | 45 | 2d | start no earlier than 2016-05-25 08:00 |
| 56 | 1.2 | **Solution** | 20.5d | 2016-05-25 13:00 | 2016-06-22 17:00 | 2 | 1d |  |
| 57 | 1.2.1 | **Sofware Requirement Specification** | 20d | 2016-05-25 13:00 | 2016-06-22 12:00 |  | 1d |  |
| 58 | 1.2.1.1 | **Functional Requirement Specification** | 19d | 2016-05-25 13:00 | 2016-06-21 12:00 |  | 1d |  |
| 59 | 1.2.1.1.1 | **Core Module** | 12d | 2016-05-25 13:00 | 2016-06-10 12:00 |  | 1d |  |
| 60 |  | Authentication module | 1d | 2016-05-25 13:00 | 2016-05-26 12:00 |  | 2d |  |
| 61 |  | Account Management module | 2d | 2016-05-26 13:00 | 2016-05-30 12:00 | 60 | 2d |  |
| 62 |  | Learning module | 4d | 2016-05-30 13:00 | 2016-06-03 12:00 | 61 | 2d |  |
| 63 |  | Question Bank module | 2d | 2016-06-03 13:00 | 2016-06-07 12:00 | 62 | 2d |  |
| 64 |  | Examination module | 2d | 2016-06-07 13:00 | 2016-06-09 12:00 | 63 | 2d |  |
| 65 |  | Content Reporting module | 0.5d | 2016-06-09 13:00 | 2016-06-09 17:00 | 64 | 2d |  |
| 66 |  | Statistic module | 0.5d | 2016-06-10 08:00 | 2016-06-10 12:00 | 65 | 2d |  |
| 67 | 1.2.1.1.2 | **Dictionary Module** | 1d | 2016-06-20 13:00 | 2016-06-21 12:00 | 59FS+6d | 1d |  |
| 68 |  | Word Looking Up module | 1d | 2016-06-20 13:00 | 2016-06-21 12:00 | 66 | 2d |  |
| 69 | 1.2.1.2 | **Non-functional Requirements Specification** | 1d | 2016-06-21 13:00 | 2016-06-22 12:00 | 67 | 1d |  |
| 70 |  | Develop User Interface requirements | 1d | 2016-06-21 13:00 | 2016-06-22 12:00 |  | 2d |  |

| ID | WBS | Task | Duration | Start | Finish | Predecessors | Total float | Constraint |
| --- | --- | --- | --- | --- | --- | --- | --- | --- |
| 71 |  | Develop Performance requirements | 1d | 2016-06-21 13:00 | 2016-06-22 12:00 |  | 2d |  |
| 72 | 1.2.2 | **System Architectural Design** | 2d | 2016-05-25 13:00 | 2016-05-27 12:00 | 2 | 14d |  |
| 73 |  | Define the system structure and unify system features | 1d | 2016-05-25 13:00 | 2016-05-26 12:00 |  | 15d |  |
| 74 |  | Study the common System Architetures | 0.5d | 2016-05-26 13:00 | 2016-05-26 17:00 | 73 | 15d |  |
| 75 |  | Make choice of System Architeture | 0.5d | 2016-05-27 08:00 | 2016-05-27 12:00 | 74 | 15d |  |
| 76 |  | Complete Architecture Design version 1.0 | 0d | 2016-05-27 12:00 | 2016-05-27 12:00 | 75 | 15d |  |
| 77 | 1.2.3 | **Detailed Design** | 5.5d | 2016-05-27 13:00 | 2016-06-03 17:00 | 72 | 14d |  |
| 78 | 1.2.3.1 | **Database design** | 2d | 2016-05-27 13:00 | 2016-05-31 12:00 |  | 17.5d |  |
| 79 |  | Organize information to Database tables | 0.5d | 2016-05-27 13:00 | 2016-05-27 17:00 |  | 18.5d |  |
| 80 |  | Define object in Database | 0.5d | 2016-05-30 08:00 | 2016-05-30 12:00 | 79 | 18.5d |  |
| 81 |  | Define relationships in Database | 0.5d | 2016-05-30 13:00 | 2016-05-30 17:00 | 80 | 18.5d |  |
| 82 |  | Refine Database design | 0.5d | 2016-05-31 08:00 | 2016-05-31 12:00 | 81 | 18.5d |  |
| 83 | 1.2.3.2 | **Screen design** | 4d | 2016-05-27 13:00 | 2016-06-02 12:00 |  | 15.5d |  |
| 84 |  | Create Screen Flow digram | 1d | 2016-05-27 13:00 | 2016-05-30 12:00 | 72 | 16.5d | start no earlier than 2016-05-27 08:00 |
| 85 |  | Create Screen Definition | 1d | 2016-05-30 13:00 | 2016-05-31 12:00 | 84 | 16.5d |  |
| 86 |  | Create Screen Design | 2d | 2016-05-31 13:00 | 2016-06-02 12:00 | 85 | 16.5d |  |
| 87 | 1.2.3.3 | **Class/Component Design** | 4.5d | 2016-05-27 13:00 | 2016-06-02 17:00 |  | 14d |  |
| 88 |  | List components of the system | 0.5d | 2016-05-27 13:00 | 2016-05-27 17:00 |  | 15d |  |
| 89 |  | Create architecture design | 2d | 2016-05-30 08:00 | 2016-05-31 17:00 | 88 | 15d |  |
| 90 |  | Create class diagram | 2d | 2016-06-01 08:00 | 2016-06-02 17:00 | 89 | 15d |  |
| 91 |  | Create review checklists | 1d | 2016-06-03 08:00 | 2016-06-03 17:00 | 90 | 15d |  |
| 92 | 1.2.4 | **Project Management** | 2d | 2016-05-27 13:00 | 2016-05-31 12:00 | 72 | 17.5d |  |
| 93 |  | Update project plan | 2d | 2016-05-27 13:00 | 2016-05-31 12:00 |  | 18.5d |  |
| 94 | 1.2.5 | **Test** | 3.5d | 2016-05-25 13:00 | 2016-05-30 17:00 |  | 18d |  |
| 95 |  | Create Test plan | 1d | 2016-05-25 13:00 | 2016-05-26 12:00 |  | 20.5d |  |
| 96 |  | Review + Update Test plan | 1d | 2016-05-26 13:00 | 2016-05-27 12:00 | 95 | 20.5d |  |
| 97 |  | Test plan approved | 0d | 2016-05-27 12:00 | 2016-05-27 12:00 | 96 | 20.5d |  |
| 98 |  | Create test cases | 2d | 2016-05-27 08:00 | 2016-05-30 17:00 |  | 19d | start no earlier than 2016-05-27 08:00 |
| 99 |  | Phase meeting | 0.5d | 2016-06-22 13:00 | 2016-06-22 17:00 | 57 | 2d |  |
| 100 | 1.3 | **Construction** | 41d | 2016-06-22 17:00 | 2016-08-18 17:00 | 56 | 1d |  |
| 101 | 1.3.1 | **Design** | 2d | 2016-06-23 08:00 | 2016-06-24 17:00 |  | 1d |  |
| 102 |  | Refine Design document | 2d | 2016-06-23 08:00 | 2016-06-24 17:00 |  | 1d |  |
| 103 | 1.3.2 | **Coding** | 31d | 2016-06-27 08:00 | 2016-08-08 17:00 | 101 | 1d |  |
| 104 |  | Build prototype | 2d | 2016-06-27 08:00 | 2016-06-28 17:00 |  | 1d |  |
| 105 |  | Prototype approved | 0d | 2016-06-28 17:00 | 2016-06-28 17:00 | 104 | 2d |  |
| 106 | 1.3.2.3 | **Coding product** | 29d | 2016-06-29 08:00 | 2016-08-08 17:00 | 105 | 1d |  |
| 107 | 1.3.2.3.1 | **Coding Fronent Modules** | 28d | 2016-06-29 08:00 | 2016-08-05 17:00 |  | 2d |  |
| 108 | 1.3.2.3.1.1 | **Core Module** | 26d | 2016-06-29 08:00 | 2016-08-03 17:00 |  | 2d |  |
| 109 |  | Common module | 2d | 2016-06-29 08:00 | 2016-06-30 17:00 |  | 2d |  |
| 110 |  | Authentication module | 1d | 2016-07-01 08:00 | 2016-07-01 17:00 | 109 | 2d |  |
| 111 |  | Account Management module | 4d | 2016-07-04 08:00 | 2016-07-07 17:00 | 110 | 2d |  |
| 112 |  | Learning module | 8d | 2016-07-08 08:00 | 2016-07-19 17:00 | 111 | 2d |  |
| 113 |  | Question Bank module | 4d | 2016-07-20 08:00 | 2016-07-25 17:00 | 112 | 2d |  |
| 114 |  | Examination module | 4d | 2016-07-26 08:00 | 2016-07-29 17:00 | 113 | 2d |  |
| 115 |  | Content Reporting module | 1d | 2016-08-01 08:00 | 2016-08-01 17:00 | 114 | 2d |  |
| 116 |  | Statistic module | 2d | 2016-08-02 08:00 | 2016-08-03 17:00 | 115 | 2d |  |
| 117 | 1.3.2.3.1.2 | **Dictionary Module** | 2d | 2016-08-04 08:00 | 2016-08-05 17:00 |  | 2d |  |
| 118 |  | Word Looking Up module | 2d | 2016-08-04 08:00 | 2016-08-05 17:00 | 116 | 2d |  |
| 119 | 1.3.2.3.2 | **Coding Backend Modules** | 28d | 2016-06-30 08:00 | 2016-08-08 17:00 | 105FS+1d | 1d |  |
| 120 | 1.3.2.3.2.1 | **Core Module** | 24d | 2016-06-30 08:00 | 2016-08-02 17:00 |  | 1d |  |
| 121 |  | Model Component | 2d | 2016-06-30 08:00 | 2016-07-01 17:00 |  | 1d |  |
| 122 |  | DAO Component | 4d | 2016-07-04 08:00 | 2016-07-07 17:00 | 121 | 1d |  |
| 123 |  | Service Component | 8d | 2016-07-08 08:00 | 2016-07-19 17:00 | 122 | 1d |  |
| 124 |  | Controller Component | 8d | 2016-07-20 08:00 | 2016-07-29 17:00 | 123 | 1d |  |
| 125 |  | Integrate components | 2d | 2016-08-01 08:00 | 2016-08-02 17:00 | 124 | 1d |  |
| 126 | 1.3.2.3.2.2 | **Dictionary Module** | 4d | 2016-08-03 08:00 | 2016-08-08 17:00 |  | 1d |  |
| 127 |  | Model Component | 0.5d | 2016-08-03 08:00 | 2016-08-03 12:00 | 125 | 1d |  |
| 128 |  | DAO Component | 0.5d | 2016-08-03 13:00 | 2016-08-03 17:00 | 127 | 1d |  |
| 129 |  | Service Component | 1d | 2016-08-04 08:00 | 2016-08-04 17:00 | 128 | 1d |  |
| 130 |  | Controller Component | 1d | 2016-08-05 08:00 | 2016-08-05 17:00 | 129 | 1d |  |
| 131 |  | Integrate components | 1d | 2016-08-08 08:00 | 2016-08-08 17:00 | 130 | 1d |  |
| 132 |  | Product development completes | 0d | 2016-08-08 17:00 | 2016-08-08 17:00 | 106 | 6d |  |
| 133 | 1.3.3 | **Testing** | 40d | 2016-06-22 17:00 | 2016-08-17 17:00 | 94 | 1d |  |
| 134 | 1.3.3.1 | **Writing Test cases (Continue)** | 8d | 2016-06-23 08:00 | 2016-07-04 17:00 |  | 33d |  |
| 135 |  | Create Integration Test Case | 2d | 2016-06-23 08:00 | 2016-06-24 17:00 |  | 33d |  |
| 136 |  | Update and review Integration Test Case | 2d | 2016-06-27 08:00 | 2016-06-28 17:00 | 135 | 33d |  |
| 137 |  | Create System Test Case | 2d | 2016-06-29 08:00 | 2016-06-30 17:00 | 136 | 33d |  |
| 138 |  | Update and review System Test Case | 2d | 2016-07-01 08:00 | 2016-07-04 17:00 | 137 | 33d |  |
| 139 |  | Writing Test cases completes | 0d | 2016-06-22 17:00 | 2016-06-22 17:00 |  | 42d |  |
| 140 | 1.3.3.3 | **Execute Test** | 7d | 2016-08-09 08:00 | 2016-08-17 17:00 | 106 | 1d |  |

| ID | WBS | Task | Duration | Start | Finish | Predecessors | Total float | Constraint |
| --- | --- | --- | --- | --- | --- | --- | --- | --- |
| 141 | 1.3.3.3.1 | **Execute Test Frontend** | 4d | 2016-08-09 08:00 | 2016-08-12 17:00 |  | 4d |  |
| 142 |  | Execute Integration Test | 2d | 2016-08-09 08:00 | 2016-08-10 17:00 |  | 4d |  |
| 143 |  | Fix bug Integration Test | 2d | 2016-08-11 08:00 | 2016-08-12 17:00 | 142 | 4d |  |
| 144 | 1.3.3.3.2 | **Execute Test Backend** | 4d | 2016-08-09 08:00 | 2016-08-12 17:00 | 141SS | 1d |  |
| 145 |  | Execute Integration Test | 2d | 2016-08-09 08:00 | 2016-08-10 17:00 |  | 2d |  |
| 146 |  | Fix bug Integration Test | 2d | 2016-08-11 08:00 | 2016-08-12 17:00 | 145 | 4d |  |
| 147 |  | Execute System Test | 2d | 2016-08-11 08:00 | 2016-08-12 17:00 | 145 | 1d |  |
| 148 |  | Fix bug System Test | 2d | 2016-08-15 08:00 | 2016-08-16 17:00 | 147 | 1d |  |
| 149 |  | Create Test Report first verstion | 1d | 2016-08-17 08:00 | 2016-08-17 17:00 | 148 | 1d |  |
| 150 |  | Complete Testing | 0d | 2016-08-17 17:00 | 2016-08-17 17:00 | 149 | 2d |  |
| 151 | 1.3.4 | **User Manual** | 3d | 2016-08-09 08:00 | 2016-08-11 17:00 | 103 | 6d |  |
| 152 |  | Create Installation guideline | 1d | 2016-08-09 08:00 | 2016-08-09 17:00 |  | 6d |  |
| 153 |  | Create User guideline | 2d | 2016-08-09 08:00 | 2016-08-10 17:00 | 152SS | 6d |  |
| 154 |  | Review + Update guidelines | 1d | 2016-08-11 08:00 | 2016-08-11 17:00 | 153 | 6d |  |
| 155 | 1.3.5 | **Manage development** | 5d | 2016-06-27 08:00 | 2016-07-01 17:00 | 103SS | 35d |  |
| 156 | 1.3.5.1 | **Manage scope/cost/time** | 5d | 2016-06-27 08:00 | 2016-07-01 17:00 |  | 35d |  |
| 157 |  | Monitor product changes | 1w | 2016-06-27 08:00 | 2016-07-01 17:00 |  | 35d |  |
| 158 |  | Monitor project changes | 1w | 2016-06-27 08:00 | 2016-07-01 17:00 |  | 35d |  |
| 159 | 1.3.5.2 | **Manage communications** | 1d | 2016-06-27 08:00 | 2016-06-27 17:00 |  | 39d |  |
| 160 | 1.3.5.2.1 | **Implement communications methods and strategies** | 1d | 2016-06-27 08:00 | 2016-06-27 17:00 |  | 39d |  |
| 161 |  | Select tools | 1d | 2016-06-27 08:00 | 2016-06-27 17:00 |  | 39d |  |
| 162 | 1.3.5.2.2 | **Distribute information** | 1d | 2016-06-27 08:00 | 2016-06-27 17:00 |  | 39d |  |
| 163 |  | Attend team meeting | 1d | 2016-06-27 08:00 | 2016-06-27 17:00 |  | 39d |  |
| 164 |  | Create status reports | 1d | 2016-06-27 08:00 | 2016-06-27 17:00 |  | 39d |  |
| 165 |  | Create Weekly Report | 1d | 2016-06-27 08:00 | 2016-06-27 17:00 |  | 39d |  |
| 166 |  | Resolve communications problems | 1d | 2016-06-27 08:00 | 2016-06-27 17:00 |  | 39d |  |
| 167 | 1.3.5.3 | **Manage quality control** | 1d | 2016-06-27 08:00 | 2016-06-27 17:00 |  | 39d |  |
| 168 |  | Monitor product quality | 1d | 2016-06-27 08:00 | 2016-06-27 17:00 |  | 39d |  |
| 169 | 1.3.5.3.2 | **Monitor project quality** | 1d | 2016-06-27 08:00 | 2016-06-27 17:00 |  | 39d |  |
| 170 |  | Implement process improvements | 1d | 2016-06-27 08:00 | 2016-06-27 17:00 |  | 39d |  |
| 171 | 1.3.5.4 | **Manage risk** | 1d | 2016-06-27 08:00 | 2016-06-27 17:00 |  | 39d |  |
| 172 |  | Monitor risks | 1d | 2016-06-27 08:00 | 2016-06-27 17:00 |  | 39d |  |
| 173 |  | Specify responses | 1d | 2016-06-27 08:00 | 2016-06-27 17:00 |  | 39d |  |
| 174 |  | Manage integration | 1d | 2016-06-27 08:00 | 2016-06-27 17:00 |  | 39d |  |
| 175 |  | Phase meeting | 0.5d | 2016-08-18 08:00 | 2016-08-18 12:00 | 133 | 1d |  |
| 176 |  | Create final report + CD | 0.5d | 2016-08-18 13:00 | 2016-08-18 17:00 | 175 | 1d |  |
| 177 | 1.4 | **Termination** | 5d | 2016-08-19 08:00 | 2016-08-25 17:00 | 100 | 1d |  |
| 178 | 1.4.1 | **Pre-Closing** | 2d | 2016-08-19 08:00 | 2016-08-22 17:00 |  | 1d |  |
| 179 |  | Training presentation | 2d | 2016-08-19 08:00 | 2016-08-22 17:00 |  | 1d |  |
| 180 | 1.4.2 | **Closing** | 3d | 2016-08-23 08:00 | 2016-08-25 17:00 | 178 | 1d |  |
| 181 |  | Prepare for presentation | 2d | 2016-08-23 08:00 | 2016-08-24 17:00 |  | 1d |  |
| 182 |  | Represent Capstone Project and Completed | 1d | 2016-08-25 08:00 | 2016-08-25 17:00 | 181 | 1d | finish no earlier than 2015-08-26 17:00 |

## Version 2 (saved 2016-08-23, file Veazy_Project Schedule_v1.2_Finished.mpp)

Note of the change: Add doc

Last finish 2016-08-26 → 2016-09-01 (+6d). Complete tasks 0 → 130.

Added:

| ID | Task | Duration | Start | Finish | Predecessors | Resources |
| --- | --- | --- | --- | --- | --- | --- |
| 56 | Finish initiation phase | 0d | 2016-05-09 11:00 A | 2016-05-09 11:00 A |  |  |
| 71 | Submit SRS | 0d | 2016-06-01 12:00 A | 2016-06-01 12:00 A | 68 |  |
| 92 | Submit details design | 0d | 2016-05-27 12:00 A | 2016-05-27 12:00 A |  |  |
| 95 | **Coding** | 2d | 2016-05-25 13:00 A | 2016-05-27 12:00 A |  |  |
| 102 | **Writing Test cases** | 7d | 2016-06-20 13:00 A | 2016-06-29 12:00 A | 100FS+6d |  |
| 106 | Finish solution phase | 0d | 2016-05-25 12:00 A | 2016-05-25 12:00 A |  |  |
| 171 | Create presentation slide | 1d | 2016-08-17 13:00 A | 2016-08-18 12:00 A |  | LinhNH |
| 172 | Create final report | 4d | 2016-08-17 13:00 A | 2016-08-23 12:00 A | 166 | MinhNN |
| 173 | Write CD + Print documents | 1d | 2016-08-23 13:00 A | 2016-08-24 12:00 A | 172 | TEAM |
| 175 | Finish Construction Phase | 0d | 2016-08-24 17:00 A | 2016-08-24 17:00 A | 174 |  |
| 182 | Finish Capstone Project | 0d | 2016-09-01 17:00 A | 2016-09-01 17:00 A | 176 |  |

Removed: 67 Dictionary Module; 68 Word Looking Up module; 98 Create test cases; 117 Dictionary Module; 118 Word Looking Up module; 126 Dictionary Module; 127 Model Component; 128 DAO Component; 129 Service Component; 130 Controller Component; 131 Integrate components

Changed:

| ID | Task | Start | Finish | Duration | Complete | Total float | Predecessors | Other |
| --- | --- | --- | --- | --- | --- | --- | --- | --- |
| 1 | **Veazy** | 2016-05-09 08:00 A | 2016-08-26 17:00 → 2016-09-01 17:00 A (+6d) | 80d → 84d | 0% → 100% |  |  |  |
| 2 | **Initiation** | 2016-05-09 08:00 A | 2016-05-25 12:00 A |  | 0% → 100% | 1.5d → none |  |  |
| 3 | **Form up** | 2016-05-09 08:00 A | 2016-05-09 12:00 A |  | 0% → 100% | 1.5d → none |  |  |
| 4 | Form up team roles | 2016-05-09 08:00 A | 2016-05-09 10:00 A |  | 0% → 100% | 1.5d → none |  |  |
| 5 | Uniform idea meeting | 2016-05-09 10:00 A | 2016-05-09 12:00 A |  | 0% → 100% | 1.5d → none |  |  |
| 6 | **Project Clarification** | 2016-05-09 13:00 A | 2016-05-10 12:00 A |  | 0% → 100% | 1.5d → none |  |  |
| 7 | Clarify project scope | 2016-05-09 13:00 A | 2016-05-09 13:48 A |  | 0% → 100% | 1.5d → none |  |  |
| 8 | Clarify technical requirements | 2016-05-09 13:48 A | 2016-05-09 14:36 A |  | 0% → 100% | 1.5d → none |  | resources TEAM → TungDT |
| 9 | Clarify rules in Team | 2016-05-09 14:36 A | 2016-05-09 15:24 A |  | 0% → 100% | 1.5d → none |  | resources TEAM → QuanNH |
| 10 | Clarify working environments | 2016-05-09 15:24 A | 2016-05-09 16:12 A |  | 0% → 100% | 1.5d → none |  |  |
| 11 | Develop communications plan | 2016-05-09 16:12 A | 2016-05-09 17:00 A |  | 0% → 100% | 1.5d → none |  |  |
| 12 | List project features | 2016-05-10 08:00 A | 2016-05-10 12:00 A |  | 0% → 100% | 1.5d → none |  |  |
| 13 | Initiate Project structure | 2016-05-10 08:00 A | 2016-05-10 12:00 A |  | 0% → 100% | 1.5d → none |  |  |
| 14 | **Environment** | 2016-05-10 13:00 A | 2016-05-11 12:00 A |  | 0% → 100% | 2d → none |  |  |
| 15 | Create guideline of installing and using environments | 2016-05-10 13:00 A | 2016-05-10 15:00 A |  | 0% → 100% | 1.5d → none |  |  |
| 16 | Setup Git Bash | 2016-05-10 15:00 A | 2016-05-10 15:30 A |  | 0% → 100% | 1.5d → none |  |  |
| 17 | Setup Eclipse & Plugin | 2016-05-10 15:30 A | 2016-05-11 08:30 A |  | 0% → 100% | 1.5d → none |  |  |
| 18 | Setup Postgresql Server | 2016-05-11 08:30 A | 2016-05-11 10:00 A |  | 0% → 100% | 1.5d → none |  |  |
| 19 | Training environments meeting | 2016-05-11 10:00 A | 2016-05-11 12:00 A |  | 0% → 100% | 1.5d → none |  |  |
| 20 | **Technology research** | 2016-05-11 13:00 A | 2016-05-16 12:00 → 2016-05-12 17:00 A (-4d) | 3d → 1.5d | 0% → 100% | 8d → none |  |  |
| 21 | Research technologies to be used in project | 2016-05-11 13:00 A | 2016-05-12 12:00 → 2016-05-11 17:00 A (-1d) | 1d → 0.5d | 0% → 100% | 3.5d → none |  |  |
| 22 | Study SpringMVC & Hibernate | 2016-05-12 13:00 → 2016-05-12 08:00 A | 2016-05-16 12:00 → 2016-05-12 17:00 A (-4d) | 2d → 1d | 0% → 100% | 3.5d → none |  | resources BackendTeam → LinhNH; TungDT |
| 23 | Study AngularJS, jQuery, Bootstrap | 2016-05-12 13:00 → 2016-05-12 08:00 A | 2016-05-16 12:00 → 2016-05-12 17:00 A (-4d) | 2d → 1d | 0% → 100% | 3.5d → none |  | resources FrontendTeam → QuanNH; ThangPD |
| 24 | **Project Introduction** | 2016-05-12 08:00 → 2016-05-12 13:00 A | 2016-05-17 17:00 → 2016-05-17 12:00 A | 4d → 3d | 0% → 100% | 1.5d → none | 14 → 21 |  |
| 25 | Create "Project Introduction" document | 2016-05-12 08:00 → 2016-05-12 13:00 A | 2016-05-13 17:00 A | 2d → 1.5d | 0% → 100% | 1.5d → none |  | resources DocTeam → DuyNT |
| 26 | Review "Project Introduction" document | 2016-05-16 08:00 A | 2016-05-16 12:00 A |  | 0% → 100% | 1d → none |  |  |
| 27 | Update "Project Introduction" document draft | 2016-05-16 13:00 A | 2016-05-16 17:00 A |  | 0% → 100% | 1d → none |  | resources DocTeam → DuyNT |
| 28 | Update "Project Introduction" based on instructor's comments | 2016-05-17 08:00 A | 2016-05-17 17:00 → 2016-05-17 12:00 A | 1d → 0.5d | 0% → 100% | 1d → none |  | resources DocTeam → DuyNT |
| 29 | Summit Project Introduction | 2016-05-17 17:00 → 2016-05-17 12:00 A | 2016-05-17 17:00 → 2016-05-17 12:00 A |  | 0% → 100% | 1d → none |  |  |
| 30 | **Requirement** | 2016-05-18 08:00 → 2016-05-13 08:00 A (-5d) | 2016-05-24 17:00 → 2016-05-19 12:00 A (-5d) | 5d → 4.5d | 0% → 100% | 1d → none | 24 → 20 |  |
| 31 | **User Requirement** | 2016-05-18 08:00 → 2016-05-13 08:00 A (-5d) | 2016-05-20 12:00 → 2016-05-16 17:00 A (-4d) | 2.5d → 2d | 0% → 100% | 1d → none |  |  |
| 32 | Develop brief "User Requirements Specification" document | 2016-05-18 08:00 → 2016-05-13 08:00 A (-5d) | 2016-05-18 17:00 → 2016-05-13 17:00 A (-5d) |  | 0% → 100% | 1d → none | none → 20 | resources DocTeam → QuanNH; ThangPD |
| 33 | Peer review brief "User Requirements Specification" document | 2016-05-19 08:00 → 2016-05-16 08:00 A (-3d) | 2016-05-19 12:00 → 2016-05-16 12:00 A (-3d) |  | 0% → 100% | 1d → none |  | resources DocTeam → LinhNH; TungDT |
| 34 | Update brief "User Requirements Specification" document | 2016-05-20 08:00 → 2016-05-16 13:00 A (-4d) | 2016-05-20 12:00 → 2016-05-16 17:00 A (-4d) |  | 0% → 100% | 0.5d → none |  | constraint start no earlier than 2016-05-20 08:00 → none; resources DocTeam → QuanNH; ThangPD |
| 35 | **Mock-up screens** | 2016-05-20 13:00 → 2016-05-17 08:00 A (-3d) | 2016-05-24 17:00 → 2016-05-19 12:00 A (-5d) |  | 0% → 100% | 1d → none |  |  |
| 36 | Collect business requirements and processes | 2016-05-20 13:00 → 2016-05-17 08:00 A (-3d) | 2016-05-20 17:00 → 2016-05-17 12:00 A (-3d) |  | 0% → 100% | 0.5d → none |  |  |
| 37 | Develop main features' mockup screens | 2016-05-23 08:00 → 2016-05-17 13:00 A (-6d) | 2016-05-24 12:00 → 2016-05-18 17:00 A (-6d) |  | 0% → 100% | 0.5d → none |  |  |
| 38 | Review and edit screen main features' mockup screens | 2016-05-24 13:00 → 2016-05-19 08:00 A (-5d) | 2016-05-24 17:00 → 2016-05-19 12:00 A (-5d) |  | 0% → 100% | 0.5d → none |  |  |
| 39 | Complete main features' mockup screens | 2016-05-24 17:00 → 2016-05-19 12:00 A (-5d) | 2016-05-24 17:00 → 2016-05-19 12:00 A (-5d) |  | 0% → 100% | 2d → none |  |  |
| 40 | **Project Plan** | 2016-05-11 13:00 → 2016-05-17 08:00 A (+6d) | 2016-05-18 17:00 → 2016-05-24 12:00 A (+6d) |  | 0% → 100% | 5.5d → none | 14 → 31 |  |
| 41 | Develop project definition | 2016-05-11 13:00 → 2016-05-17 08:00 A (+6d) | 2016-05-11 17:00 → 2016-05-17 12:00 A (+6d) |  | 0% → 100% | 6d → none |  |  |
| 42 | Create CM Plan document | 2016-05-11 13:00 → 2016-05-17 08:00 A (+6d) | 2016-05-11 17:00 → 2016-05-17 12:00 A (+6d) |  | 0% → 100% | 6d → none |  |  |
| 43 | Develop Risk Register | 2016-05-11 13:00 → 2016-05-17 08:00 A (+6d) | 2016-05-11 17:00 → 2016-05-17 12:00 A (+6d) |  | 0% → 100% | 6d → none |  |  |
| 44 | Create Project plan document | 2016-05-11 13:00 → 2016-05-17 08:00 A (+6d) | 2016-05-13 12:00 → 2016-05-18 17:00 A (+5d) |  | 0% → 100% | 5.5d → none |  |  |
| 45 | Create Work BreakDown Structure | 2016-05-13 13:00 → 2016-05-19 08:00 A (+6d) | 2016-05-13 17:00 → 2016-05-19 12:00 A (+6d) |  | 0% → 100% | 5.5d → none |  |  |
| 46 | Create Project schedule document | 2016-05-16 08:00 → 2016-05-19 13:00 A (+3d) | 2016-05-17 17:00 → 2016-05-23 12:00 A (+6d) |  | 0% → 100% | 5.5d → none |  |  |
| 47 | Review & get comment of Project Plan | 2016-05-18 08:00 → 2016-05-23 13:00 A (+5d) | 2016-05-18 12:00 → 2016-05-23 17:00 A (+5d) |  | 0% → 100% | 5.5d → none |  |  |
| 48 | Update Project Plan documents (Schedule, Project Plan in MS Word, CM Plan) | 2016-05-18 13:00 → 2016-05-24 08:00 A (+6d) | 2016-05-18 17:00 → 2016-05-24 12:00 A (+6d) |  | 0% → 100% | 5.5d → none |  |  |
| 49 | Summit Project Plan Final version | 2016-05-18 17:00 → 2016-05-24 12:00 A (+6d) | 2016-05-18 17:00 → 2016-05-24 12:00 A (+6d) |  | 0% → 100% | 5.5d → none |  |  |
| 50 | **Q&A sheet** | 2016-05-18 13:00 → 2016-05-19 13:00 A (+1d) | 2016-05-19 12:00 → 2016-05-20 12:00 A (+1d) |  | 0% → 100% | 5d → none | 24 → 30 |  |
| 51 | Create Q&A | 2016-05-18 13:00 → 2016-05-19 13:00 A (+1d) | 2016-05-18 17:00 → 2016-05-19 17:00 A (+1d) |  | 0% → 100% | 0.5d → none | 54 → 30 |  |
| 52 | Update Q&A sheet | 2016-05-19 08:00 → 2016-05-20 08:00 A (+1d) | 2016-05-19 12:00 → 2016-05-20 12:00 A (+1d) |  | 0% → 100% | 0.5d → none |  |  |
| 53 | Translate Q&A sheet | 2016-05-19 08:00 → 2016-05-20 08:00 A (+1d) | 2016-05-19 12:00 → 2016-05-20 12:00 A (+1d) |  | 0% → 100% | 0.5d → none |  |  |
| 54 | Kick-off meeting | 2016-05-18 08:00 → 2016-05-24 13:00 A (+6d) | 2016-05-18 12:00 → 2016-05-24 17:00 A (+6d) |  | 0% → 100% | 6d → none | 24 → 40 |  |
| 55 | Phase meeting | 2016-05-25 08:00 A | 2016-05-25 12:00 A |  | 0% → 100% | 2d → none | 30 → 54 | constraint start no earlier than 2016-05-25 08:00 → none |
| 57 | **Solution** | 2016-05-25 13:00 → 2016-05-25 12:00 A | 2016-06-22 17:00 → 2016-06-29 12:00 A (+7d) | 20.5d → 25d | 0% → 100% | 1d → none |  |  |
| 58 | **Sofware Requirement Specification** | 2016-05-25 13:00 A | 2016-06-22 12:00 → 2016-06-01 12:00 A (-21d) | 20d → 5d | 0% → 100% | 1d → none |  |  |
| 59 | **Functional Requirement Specification** | 2016-05-25 13:00 A | 2016-06-21 12:00 → 2016-05-31 12:00 A (-21d) | 19d → 4d | 0% → 100% | 1d → none |  |  |
| 60 | **Core Module** | 2016-05-25 13:00 A | 2016-06-10 12:00 → 2016-05-31 12:00 A (-10d) | 12d → 4d | 0% → 100% | 1d → none |  |  |
| 61 | Authentication module | 2016-05-25 13:00 A | 2016-05-26 12:00 A |  | 0% → 100% | 2d → none | none → 2 | resources DocTeam → DuyNT |
| 62 | Account Management module | 2016-05-26 13:00 → 2016-05-25 13:00 A (-1d) | 2016-05-30 12:00 → 2016-05-27 12:00 A (-3d) |  | 0% → 100% | 2d → none | 61 → 2 | resources DocTeam → QuanNH |
| 63 | Learning module | 2016-05-30 13:00 → 2016-05-25 13:00 A (-5d) | 2016-06-03 12:00 → 2016-05-31 12:00 A (-3d) |  | 0% → 100% | 2d → none | 62 → 2 | resources DocTeam → ThangPD |
| 64 | Question Bank module | 2016-06-03 13:00 → 2016-05-26 13:00 A (-8d) | 2016-06-07 12:00 → 2016-05-30 12:00 A (-8d) |  | 0% → 100% | 2d → none | 63 → 61 | resources DocTeam → DuyNT |
| 65 | Examination module | 2016-06-07 13:00 → 2016-05-27 13:00 A (-11d) | 2016-06-09 12:00 → 2016-05-31 12:00 A (-9d) |  | 0% → 100% | 2d → none | 64 → 62 | resources DocTeam → QuanNH |
| 66 | Content Reporting module | 2016-06-09 13:00 → 2016-05-30 13:00 A (-10d) | 2016-06-09 17:00 → 2016-05-30 17:00 A (-10d) |  | 0% → 100% | 2d → none | 65 → 64 | resources DocTeam → DuyNT |
| 67 | Statistic module | 2016-06-10 08:00 → 2016-05-31 08:00 A (-10d) | 2016-06-10 12:00 → 2016-05-31 12:00 A (-10d) |  | 0% → 100% | 2d → none |  | resources DocTeam → DuyNT |
| 68 | **Non-functional Requirements Specification** | 2016-06-21 13:00 → 2016-05-31 13:00 A (-21d) | 2016-06-22 12:00 → 2016-06-01 12:00 A (-21d) |  | 0% → 100% | 1d → none | Dictionary Module → 60 |  |
| 69 | Develop User Interface requirements | 2016-06-21 13:00 → 2016-05-31 13:00 A (-21d) | 2016-06-22 12:00 → 2016-06-01 12:00 A (-21d) |  | 0% → 100% | 2d → none |  | resources DocTeam → QuanNH |
| 70 | Develop Performance requirements | 2016-06-21 13:00 → 2016-05-31 13:00 A (-21d) | 2016-06-22 12:00 → 2016-06-01 12:00 A (-21d) |  | 0% → 100% | 2d → none | none → 60 | resources DocTeam → ThangPD |
| 72 | **System Architectural Design** | 2016-05-25 13:00 A | 2016-05-27 12:00 A |  | 0% → 100% | 14d → none |  |  |

| ID | Task | Start | Finish | Duration | Complete | Total float | Predecessors | Other |
| --- | --- | --- | --- | --- | --- | --- | --- | --- |
| 73 | Define the system structure and unify system features | 2016-05-25 13:00 A | 2016-05-26 12:00 A |  | 0% → 100% | 15d → none |  | resources DevTeam → MinhNN |
| 74 | Study the common System Architetures | 2016-05-26 13:00 A | 2016-05-26 17:00 A |  | 0% → 100% | 15d → none |  | resources DevTeam → MinhNN |
| 75 | Make choice of System Architeture | 2016-05-27 08:00 A | 2016-05-27 12:00 A |  | 0% → 100% | 15d → none |  | resources DevTeam → MinhNN |
| 76 | Complete Architecture Design version 1.0 | 2016-05-27 12:00 A | 2016-05-27 12:00 A |  | 0% → 100% | 15d → none |  |  |
| 77 | **Detailed Design** | 2016-05-27 13:00 → 2016-05-27 12:00 A | 2016-06-03 17:00 → 2016-06-08 12:00 A (+5d) | 5.5d → 8d | 0% → 100% | 14d → none |  |  |
| 78 | **Database design** | 2016-05-27 13:00 → 2016-06-01 13:00 A (+5d) | 2016-05-31 12:00 → 2016-06-06 12:00 A (+6d) | 2d → 3d | 0% → 100% | 17.5d → none | none → 58 |  |
| 79 | Organize information to Database tables | 2016-05-27 13:00 → 2016-06-01 13:00 A (+5d) | 2016-05-27 17:00 → 2016-06-01 17:00 A (+5d) |  | 0% → 100% | 18.5d → none |  | resources BackendTeam → LinhNH |
| 80 | Define object in Database | 2016-05-30 08:00 → 2016-06-02 08:00 A (+3d) | 2016-05-30 12:00 → 2016-06-02 17:00 A (+3d) | 0.5d → 1d | 0% → 100% | 18.5d → none |  | resources BackendTeam → LinhNH |
| 81 | Define relationships in Database | 2016-05-30 13:00 → 2016-06-03 08:00 A (+4d) | 2016-05-30 17:00 → 2016-06-03 17:00 A (+4d) | 0.5d → 1d | 0% → 100% | 18.5d → none |  | resources BackendTeam → LinhNH |
| 82 | Refine Database design | 2016-05-31 08:00 → 2016-06-06 08:00 A (+6d) | 2016-05-31 12:00 → 2016-06-06 12:00 A (+6d) |  | 0% → 100% | 18.5d → none |  | resources BackendTeam → LinhNH |
| 83 | **Screen design** | 2016-05-27 13:00 A | 2016-06-02 12:00 → 2016-06-07 12:00 A (+5d) | 4d → 7d | 0% → 100% | 15.5d → none |  |  |
| 84 | Create Screen Flow digram | 2016-05-27 13:00 A | 2016-05-30 12:00 A |  | 0% → 100% | 16.5d → none | 72 → 35 | constraint start no earlier than 2016-05-27 08:00 → none; resources FrontendTeam → QuanNH |
| 85 | Create Screen Definition | 2016-05-30 13:00 A | 2016-05-31 12:00 → 2016-06-01 12:00 A (+1d) | 1d → 2d | 0% → 100% | 16.5d → none |  | resources FrontendTeam → QuanNH |
| 86 | Create Screen Design | 2016-05-31 13:00 → 2016-06-01 13:00 A (+1d) | 2016-06-02 12:00 → 2016-06-07 12:00 A (+5d) | 2d → 4d | 0% → 100% | 16.5d → none |  | resources FrontendTeam → QuanNH |
| 87 | **Class/Component Design** | 2016-05-27 13:00 A | 2016-06-02 17:00 → 2016-06-07 12:00 A (+5d) | 4.5d → 7d | 0% → 100% | 14d → none | none → 72 |  |
| 88 | List components of the system | 2016-05-27 13:00 A | 2016-05-27 17:00 → 2016-05-30 12:00 A (+3d) | 0.5d → 1d | 0% → 100% | 15d → none |  | resources DevTeam → TungDT |
| 89 | Create architecture design | 2016-05-30 08:00 → 2016-05-30 13:00 A | 2016-05-31 17:00 → 2016-06-01 12:00 A (+1d) |  | 0% → 100% | 15d → none |  | resources DevTeam → TungDT |
| 90 | Create class diagram | 2016-06-01 08:00 → 2016-06-01 13:00 A | 2016-06-02 17:00 → 2016-06-07 12:00 A (+5d) | 2d → 4d | 0% → 100% | 15d → none |  | resources DevTeam → TungDT |
| 91 | Create review checklists | 2016-06-03 08:00 → 2016-06-07 13:00 A (+4d) | 2016-06-03 17:00 → 2016-06-08 12:00 A (+5d) |  | 0% → 100% | 15d → none |  | resources DevTeam → DuyNT |
| 93 | **Project Management** | 2016-05-27 13:00 A | 2016-05-31 12:00 A |  | 0% → 100% | 17.5d → none |  |  |
| 94 | Update project plan | 2016-05-27 13:00 A | 2016-05-31 12:00 A |  | 0% → 100% | 18.5d → none |  |  |
| 96 | Build prototype | 2016-06-27 08:00 → 2016-05-25 13:00 A (-33d) | 2016-06-28 17:00 → 2016-05-27 12:00 A (-32d) |  | 0% → 100% | 1d → none |  | resources DevTeam → TungDT |
| 97 | Prototype approved | 2016-06-28 17:00 → 2016-05-27 12:00 A (-32d) | 2016-06-28 17:00 → 2016-05-27 12:00 A (-32d) |  | 0% → 100% | 2d → none |  |  |
| 98 | **Test** | 2016-05-25 13:00 → 2016-06-08 13:00 A (+14d) | 2016-05-30 17:00 → 2016-06-29 12:00 A (+30d) | 3.5d → 15d | 0% → 100% | 18d → none | none → 77 |  |
| 99 | Create Test plan | 2016-05-25 13:00 → 2016-06-08 13:00 A (+14d) | 2016-05-26 12:00 → 2016-06-09 12:00 A (+14d) |  | 0% → 100% | 20.5d → none |  |  |
| 100 | Review + Update Test plan | 2016-05-26 13:00 → 2016-06-09 13:00 A (+14d) | 2016-05-27 12:00 → 2016-06-10 12:00 A (+14d) |  | 0% → 100% | 20.5d → none |  |  |
| 101 | Test plan approved | 2016-05-27 12:00 → 2016-06-10 12:00 A (+14d) | 2016-05-27 12:00 → 2016-06-10 12:00 A (+14d) |  | 0% → 100% | 20.5d → none |  |  |
| 103 | Create Integration Test Case | 2016-06-23 08:00 → 2016-06-20 13:00 A (-3d) | 2016-06-24 17:00 → 2016-06-27 12:00 A (+3d) | 2d → 5d | 0% → 100% | 33d → none |  | resources TestTeam → QuanNH |
| 104 | Update and review Integration Test Case | 2016-06-27 08:00 → 2016-06-27 13:00 A | 2016-06-28 17:00 → 2016-06-29 12:00 A (+1d) |  | 0% → 100% | 33d → none |  | resources DevTeam → MinhNN |
| 105 | Phase meeting | 2016-06-22 13:00 → 2016-06-01 13:00 A (-21d) | 2016-06-22 17:00 → 2016-06-01 17:00 A (-21d) |  | 0% → 100% | 2d → none |  |  |
| 107 | **Construction** | 2016-06-22 17:00 → 2016-06-29 13:00 A (+7d) | 2016-08-18 17:00 → 2016-08-24 17:00 A (+6d) | 41d → 40.5d | 0% → 100% | 1d → none |  |  |
| 108 | **Design** | 2016-06-23 08:00 → 2016-06-29 13:00 A (+6d) | 2016-06-24 17:00 → 2016-07-01 12:00 A (+7d) |  | 0% → 100% | 1d → none |  |  |
| 109 | Refine Design document | 2016-06-23 08:00 → 2016-06-29 13:00 A (+6d) | 2016-06-24 17:00 → 2016-07-01 12:00 A (+7d) |  | 0% → 100% | 1d → none |  | resources DevTeam → TungDT |
| 110 | **Coding** | 2016-06-27 08:00 → 2016-06-29 13:00 A (+2d) | 2016-08-08 17:00 → 2016-08-01 12:00 A (-7d) | 31d → 23d | 0% → 100% | 1d → none | 108 → 97 |  |
| 111 | **Coding product** | 2016-06-29 08:00 → 2016-06-29 13:00 A | 2016-08-08 17:00 → 2016-08-01 12:00 A (-7d) | 29d → 23d | 0% → 100% | 1d → none | 97 → none |  |
| 112 | **Coding Fronent Modules** | 2016-06-29 08:00 → 2016-06-29 13:00 A | 2016-08-05 17:00 → 2016-07-20 12:00 A (-16d) | 28d → 15d | 0% → 100% | 2d → none |  |  |
| 113 | **Core Module** | 2016-06-29 08:00 → 2016-06-29 13:00 A | 2016-08-03 17:00 → 2016-07-20 12:00 A (-14d) | 26d → 15d | 0% → 100% | 2d → none |  |  |
| 114 | Common module | 2016-06-29 08:00 → 2016-06-29 13:00 A | 2016-06-30 17:00 → 2016-07-01 12:00 A (+1d) |  | 0% → 100% | 2d → none |  | resources FrontendTeam → DuyNT |
| 115 | Authentication module | 2016-07-01 08:00 → 2016-07-01 13:00 A | 2016-07-01 17:00 → 2016-07-04 12:00 A (+3d) |  | 0% → 100% | 2d → none |  | resources FrontendTeam → DuyNT |
| 116 | Learning module | 2016-07-08 08:00 → 2016-07-04 13:00 A (-4d) | 2016-07-19 17:00 → 2016-07-14 12:00 A (-5d) |  | 0% → 100% | 2d → none | 118 → 115 | resources FrontendTeam → DuyNT |
| 117 | Examination module | 2016-07-26 08:00 → 2016-07-14 13:00 A (-12d) | 2016-07-29 17:00 → 2016-07-20 12:00 A (-9d) |  | 0% → 100% | 2d → none | 119 → 116 | resources FrontendTeam → DuyNT |
| 118 | Account Management module | 2016-07-04 08:00 → 2016-06-29 13:00 A (-5d) | 2016-07-07 17:00 → 2016-07-05 12:00 A (-2d) |  | 0% → 100% | 2d → none | 115 → 97 | resources FrontendTeam → ThangPD |
| 119 | Question Bank module | 2016-07-20 08:00 → 2016-07-05 13:00 A (-15d) | 2016-07-25 17:00 → 2016-07-11 12:00 A (-14d) |  | 0% → 100% | 2d → none | 116 → 118 | resources FrontendTeam → ThangPD |
| 120 | Content Reporting module | 2016-08-01 08:00 → 2016-07-11 13:00 A (-21d) | 2016-08-01 17:00 → 2016-07-12 12:00 A (-20d) |  | 0% → 100% | 2d → none | 117 → 119 | resources FrontendTeam → ThangPD |
| 121 | Statistic module | 2016-08-02 08:00 → 2016-07-12 13:00 A (-21d) | 2016-08-03 17:00 → 2016-07-14 12:00 A (-20d) |  | 0% → 100% | 2d → none |  | resources FrontendTeam → ThangPD |
| 122 | **Coding Backend Modules** | 2016-06-30 08:00 → 2016-06-29 13:00 A (-1d) | 2016-08-08 17:00 → 2016-08-01 12:00 A (-7d) | 28d → 23d | 0% → 100% | 1d → none | 97FS+1d → 97 |  |
| 123 | **Core Module** | 2016-06-30 08:00 → 2016-06-29 13:00 A (-1d) | 2016-08-02 17:00 → 2016-08-01 12:00 A (-1d) | 24d → 23d | 0% → 100% | 1d → none |  |  |
| 124 | Model Component | 2016-06-30 08:00 → 2016-06-29 13:00 A (-1d) | 2016-07-01 17:00 → 2016-06-30 12:00 A (-1d) | 2d → 1d | 0% → 100% | 1d → none |  | resources BackendTeam → LinhNH; TungDT |
| 125 | DAO Component | 2016-07-04 08:00 → 2016-06-30 13:00 A (-4d) | 2016-07-07 17:00 → 2016-07-06 12:00 A (-1d) |  | 0% → 100% | 1d → none |  | resources BackendTeam → LinhNH; TungDT |
| 126 | Service Component | 2016-07-08 08:00 → 2016-07-06 13:00 A (-2d) | 2016-07-19 17:00 → 2016-07-18 12:00 A (-1d) |  | 0% → 100% | 1d → none |  | resources BackendTeam → LinhNH; TungDT |
| 127 | Controller Component | 2016-07-20 08:00 → 2016-07-18 13:00 A (-2d) | 2016-07-29 17:00 → 2016-07-28 12:00 A (-1d) |  | 0% → 100% | 1d → none |  | resources BackendTeam → LinhNH; TungDT |
| 128 | Integrate components | 2016-08-01 08:00 → 2016-07-28 13:00 A (-4d) | 2016-08-02 17:00 → 2016-08-01 12:00 A (-1d) |  | 0% → 100% | 1d → none |  | resources BackendTeam → LinhNH; TungDT |
| 129 | Product development completes | 2016-08-08 17:00 → 2016-08-01 12:00 A (-7d) | 2016-08-08 17:00 → 2016-08-01 12:00 A (-7d) |  | 0% → 100% | 6d → none |  |  |
| 130 | **Testing** | 2016-06-22 17:00 → 2016-06-29 13:00 A (+7d) | 2016-08-17 17:00 → 2016-08-12 12:00 A (-5d) | 40d → 32d | 0% → 100% | 1d → none |  |  |
| 131 | **Writing Test cases (Continue)** | 2016-06-23 08:00 → 2016-06-29 13:00 A (+6d) | 2016-07-04 17:00 → 2016-07-07 12:00 A (+3d) | 8d → 6d | 0% → 100% | 33d → none |  |  |
| 132 | Create System Test Case | 2016-06-29 08:00 → 2016-06-29 13:00 A | 2016-06-30 17:00 → 2016-07-05 12:00 A (+5d) | 2d → 4d | 0% → 100% | 33d → none |  | resources TestTeam → QuanNH |
| 133 | Update and review System Test Case | 2016-07-01 08:00 → 2016-07-05 13:00 A (+4d) | 2016-07-04 17:00 → 2016-07-07 12:00 A (+3d) |  | 0% → 100% | 33d → none |  | resources DevTeam → MinhNN |
| 134 | Writing Test cases completes | 2016-06-22 17:00 → 2016-07-07 12:00 A (+15d) | 2016-06-22 17:00 → 2016-07-07 12:00 A (+15d) |  | 0% → 100% | 42d → none | none → 131 |  |
| 135 | **Execute Test** | 2016-08-09 08:00 → 2016-08-01 13:00 A (-8d) | 2016-08-17 17:00 → 2016-08-12 12:00 A (-5d) | 7d → 9d | 0% → 100% | 1d → none | 111 → 110 |  |
| 136 | **Execute Test Frontend** | 2016-08-09 08:00 → 2016-08-01 13:00 A (-8d) | 2016-08-12 17:00 → 2016-08-05 12:00 A (-7d) |  | 0% → 100% | 4d → none |  |  |
| 137 | Execute Integration Test | 2016-08-09 08:00 → 2016-08-01 13:00 A (-8d) | 2016-08-10 17:00 → 2016-08-03 12:00 A (-7d) |  | 0% → 100% | 4d → none |  | resources TestTeam → QuanNH |
| 138 | Fix bug Integration Test | 2016-08-11 08:00 → 2016-08-03 13:00 A (-8d) | 2016-08-12 17:00 → 2016-08-05 12:00 A (-7d) |  | 0% → 100% | 4d → none |  | resources DevTeam → DuyNT; ThangPD |
| 139 | **Execute Test Backend** | 2016-08-09 08:00 → 2016-08-01 13:00 A (-8d) | 2016-08-12 17:00 → 2016-08-05 12:00 A (-7d) |  | 0% → 100% | 1d → none |  |  |
| 140 | Execute Integration Test | 2016-08-09 08:00 → 2016-08-01 13:00 A (-8d) | 2016-08-10 17:00 → 2016-08-03 12:00 A (-7d) |  | 0% → 100% | 2d → none |  | resources TestTeam → QuanNH |
| 141 | Fix bug Integration Test | 2016-08-11 08:00 → 2016-08-03 13:00 A (-8d) | 2016-08-12 17:00 → 2016-08-05 12:00 A (-7d) |  | 0% → 100% | 4d → none |  | resources DevTeam → LinhNH; TungDT |
| 142 | Execute System Test | 2016-08-11 08:00 → 2016-08-03 13:00 A (-8d) | 2016-08-12 17:00 → 2016-08-09 12:00 A (-3d) | 2d → 4d | 0% → 100% | 1d → none |  | resources TestTeam → DuyNT; QuanNH |
| 143 | Fix bug System Test | 2016-08-15 08:00 → 2016-08-09 13:00 A (-6d) | 2016-08-16 17:00 → 2016-08-11 12:00 A (-5d) |  | 0% → 100% | 1d → none |  | resources DevTeam → LinhNH; ThangPD |
| 144 | Create Test Report first verstion | 2016-08-17 08:00 → 2016-08-11 13:00 A (-6d) | 2016-08-17 17:00 → 2016-08-12 12:00 A (-5d) |  | 0% → 100% | 1d → none |  | resources DocTeam → QuanNH |
| 145 | Complete Testing | 2016-08-17 17:00 → 2016-08-12 12:00 A (-5d) | 2016-08-17 17:00 → 2016-08-12 12:00 A (-5d) |  | 0% → 100% | 2d → none |  |  |
| 146 | **Manage development** | 2016-06-27 08:00 → 2016-06-29 13:00 A (+2d) | 2016-07-01 17:00 → 2016-07-06 12:00 A (+5d) |  | 0% → 100% | 35d → none |  |  |

| ID | Task | Start | Finish | Duration | Complete | Total float | Predecessors | Other |
| --- | --- | --- | --- | --- | --- | --- | --- | --- |
| 147 | **Manage scope/cost/time** | 2016-06-27 08:00 → 2016-06-29 13:00 A (+2d) | 2016-07-01 17:00 → 2016-07-06 12:00 A (+5d) |  | 0% → 100% | 35d → none |  |  |
| 148 | Monitor product changes | 2016-06-27 08:00 → 2016-06-29 13:00 A (+2d) | 2016-07-01 17:00 → 2016-07-06 12:00 A (+5d) |  | 0% → 100% | 35d → none |  |  |
| 149 | Monitor project changes | 2016-06-27 08:00 → 2016-06-29 13:00 A (+2d) | 2016-07-01 17:00 → 2016-07-06 12:00 A (+5d) |  | 0% → 100% | 35d → none |  |  |
| 150 | **Manage communications** | 2016-06-27 08:00 → 2016-06-29 13:00 A (+2d) | 2016-06-27 17:00 → 2016-06-30 12:00 A (+3d) |  | 0% → 100% | 39d → none |  |  |
| 151 | **Implement communications methods and strategies** | 2016-06-27 08:00 → 2016-06-29 13:00 A (+2d) | 2016-06-27 17:00 → 2016-06-30 12:00 A (+3d) |  | 0% → 100% | 39d → none |  |  |
| 152 | Select tools | 2016-06-27 08:00 → 2016-06-29 13:00 A (+2d) | 2016-06-27 17:00 → 2016-06-30 12:00 A (+3d) |  | 0% → 100% | 39d → none |  |  |
| 153 | **Distribute information** | 2016-06-27 08:00 → 2016-06-29 13:00 A (+2d) | 2016-06-27 17:00 → 2016-06-30 12:00 A (+3d) |  | 0% → 100% | 39d → none |  |  |
| 154 | Attend team meeting | 2016-06-27 08:00 → 2016-06-29 13:00 A (+2d) | 2016-06-27 17:00 → 2016-06-30 12:00 A (+3d) |  | 0% → 100% | 39d → none |  |  |
| 155 | Create status reports | 2016-06-27 08:00 → 2016-06-29 13:00 A (+2d) | 2016-06-27 17:00 → 2016-06-30 12:00 A (+3d) |  | 0% → 100% | 39d → none |  |  |
| 156 | Create Weekly Report | 2016-06-27 08:00 → 2016-06-29 13:00 A (+2d) | 2016-06-27 17:00 → 2016-06-30 12:00 A (+3d) |  | 0% → 100% | 39d → none |  |  |
| 157 | Resolve communications problems | 2016-06-27 08:00 → 2016-06-29 13:00 A (+2d) | 2016-06-27 17:00 → 2016-06-30 12:00 A (+3d) |  | 0% → 100% | 39d → none |  |  |
| 158 | **Manage quality control** | 2016-06-27 08:00 → 2016-06-29 13:00 A (+2d) | 2016-06-27 17:00 → 2016-06-30 12:00 A (+3d) |  | 0% → 100% | 39d → none |  |  |
| 159 | Monitor product quality | 2016-06-27 08:00 → 2016-06-29 13:00 A (+2d) | 2016-06-27 17:00 → 2016-06-30 12:00 A (+3d) |  | 0% → 100% | 39d → none |  |  |
| 160 | **Monitor project quality** | 2016-06-27 08:00 → 2016-06-29 13:00 A (+2d) | 2016-06-27 17:00 → 2016-06-30 12:00 A (+3d) |  | 0% → 100% | 39d → none |  |  |
| 161 | Implement process improvements | 2016-06-27 08:00 → 2016-06-29 13:00 A (+2d) | 2016-06-27 17:00 → 2016-06-30 12:00 A (+3d) |  | 0% → 100% | 39d → none |  |  |
| 162 | **Manage risk** | 2016-06-27 08:00 → 2016-06-29 13:00 A (+2d) | 2016-06-27 17:00 → 2016-06-30 12:00 A (+3d) |  | 0% → 100% | 39d → none |  |  |
| 163 | Monitor risks | 2016-06-27 08:00 → 2016-06-29 13:00 A (+2d) | 2016-06-27 17:00 → 2016-06-30 12:00 A (+3d) |  | 0% → 100% | 39d → none |  |  |
| 164 | Specify responses | 2016-06-27 08:00 → 2016-06-29 13:00 A (+2d) | 2016-06-27 17:00 → 2016-06-30 12:00 A (+3d) |  | 0% → 100% | 39d → none |  |  |
| 165 | Manage integration | 2016-06-27 08:00 → 2016-06-29 13:00 A (+2d) | 2016-06-27 17:00 → 2016-06-30 12:00 A (+3d) |  | 0% → 100% | 39d → none |  |  |
| 166 | **User Manual** | 2016-08-09 08:00 → 2016-08-01 13:00 A (-8d) | 2016-08-11 17:00 → 2016-08-17 12:00 A (+6d) | 3d → 12d | 0% → 100% | 6d → none |  |  |
| 167 | Create Installation guideline | 2016-08-09 08:00 → 2016-08-01 13:00 A (-8d) | 2016-08-09 17:00 → 2016-08-02 12:00 A (-7d) |  | 0% → 100% | 6d → none |  | resources DocTeam → TungDT |
| 168 | Create User guideline | 2016-08-09 08:00 → 2016-08-12 13:00 A (+3d) | 2016-08-10 17:00 → 2016-08-16 12:00 A (+6d) |  | 0% → 100% | 6d → none | 167SS → 135 | resources DocTeam → QuanNH |
| 169 | Review + Update guidelines | 2016-08-11 08:00 → 2016-08-16 13:00 A (+5d) | 2016-08-11 17:00 → 2016-08-17 12:00 A (+6d) |  | 0% → 100% | 6d → none |  |  |
| 170 | **Create final report + CD** | 2016-08-18 13:00 → 2016-08-17 13:00 A (-1d) | 2016-08-18 17:00 → 2016-08-24 12:00 A (+6d) | 0.5d → 5d | 0% → 100% | 1d → none | 174 → 166 |  |
| 174 | Phase meeting | 2016-08-18 08:00 → 2016-08-24 13:00 A (+6d) | 2016-08-18 12:00 → 2016-08-24 17:00 A (+6d) |  | 0% → 100% | 1d → none | 130 → 170 |  |
| 176 | **Termination** | 2016-08-19 08:00 → 2016-08-25 08:00 A (+6d) | 2016-08-25 17:00 → 2016-09-01 17:00 A (+7d) | 5d → 6d | 0% → 100% | 1d → none |  |  |
| 177 | **Pre-Closing** | 2016-08-19 08:00 → 2016-08-25 08:00 A (+6d) | 2016-08-22 17:00 → 2016-08-29 17:00 A (+7d) | 2d → 3d | 0% → 100% | 1d → none |  |  |
| 178 | Training presentation | 2016-08-19 08:00 → 2016-08-25 08:00 A (+6d) | 2016-08-22 17:00 → 2016-08-29 17:00 A (+7d) | 2d → 3d | 0% → 100% | 1d → none |  |  |
| 179 | **Closing** | 2016-08-23 08:00 → 2016-08-30 08:00 A (+7d) | 2016-08-25 17:00 → 2016-09-01 17:00 A (+7d) |  | 0% → 100% | 1d → none |  |  |
| 180 | Prepare for presentation | 2016-08-23 08:00 → 2016-08-30 08:00 A (+7d) | 2016-08-24 17:00 → 2016-08-31 17:00 A (+7d) |  | 0% → 100% | 1d → none |  |  |
| 181 | Represent Capstone Project and Completed | 2016-08-25 08:00 → 2016-09-01 08:00 A (+7d) | 2016-08-25 17:00 → 2016-09-01 17:00 A (+7d) |  | 0% → 100% | 1d → none | 180 → none | constraint finish no earlier than 2015-08-26 17:00 → start no earlier than 2016-09-01 08:00 |
