# Veazy_Project Schedule_v1.2_EN

How a schedule from MS Project changed from version to version. A marks actual dates.

## Version 1 (saved 2016-07-30)

Note of the change: Complete report 1

| ID | WBS | Task | Duration | Start | Finish | Predecessors | Total float | Constraint |
| --- | --- | --- | --- | --- | --- | --- | --- | --- |
| 1 | 1 | **Veazy** | 80d | 2016-05-09 08:00 | 2016-08-26 17:00 |  |  |  |
| 2 | 1.1 | **Initiation** | 12.5d | 2016-05-09 08:00 | 2016-05-25 12:00 |  | 1.5d |  |
| 3 | 1.1.1 | **Form up** | 0.5d | 2016-05-09 08:00 | 2016-05-09 12:00 |  | 1.5d |  |
| 4 |  | Form up team roles | 0.25d | 2016-05-09 08:00 | 2016-05-09 10:00 |  | 1.5d | start no earlier than 2016-05-09 08:00 |
| 5 |  | Uniform idea meeting | 0.25d | 2016-05-09 10:00 | 2016-05-09 12:00 | 4 | 1.5d |  |
| 6 | 1.1.2 | **Project Clarification** | 1d | 2016-05-09 13:00 | 2016-05-10 12:00 |  | 1.5d |  |
| 7 |  | Clarify project scope | 0.1d | 2016-05-09 13:00 | 2016-05-09 13:48 | 5 | 1.5d |  |
| 8 |  | Clarify technical requirements | 0.1d | 2016-05-09 13:48 | 2016-05-09 14:36 | 7 | 1.5d |  |
| 9 |  | Clarify rules in Team | 0.1d | 2016-05-09 14:36 | 2016-05-09 15:24 | 8 | 1.5d |  |
| 10 |  | Clarify working environments | 0.1d | 2016-05-09 15:24 | 2016-05-09 16:12 | 9 | 1.5d |  |
| 11 |  | Develop communications plan | 0.1d | 2016-05-09 16:12 | 2016-05-09 17:00 | 10 | 1.5d |  |
| 12 |  | List project features | 0.5d | 2016-05-10 08:00 | 2016-05-10 12:00 | 11 | 1.5d | start no earlier than 2016-05-10 08:00 |
| 13 |  | Initiate Project structure | 0.5d | 2016-05-10 08:00 | 2016-05-10 12:00 | 11 | 1.5d |  |
| 14 | 1.1.3 | **Environment** | 1d | 2016-05-10 13:00 | 2016-05-11 12:00 | 6 | 2d |  |
| 15 |  | Create guideline of installing and using environments | 2h | 2016-05-10 13:00 | 2016-05-10 15:00 | 12 | 1.5d |  |
| 16 |  | Setup Git Bash | 0.5h | 2016-05-10 15:00 | 2016-05-10 15:30 | 15 | 1.5d |  |
| 17 |  | Setup Eclipse & Plugin | 2h | 2016-05-10 15:30 | 2016-05-11 08:30 | 16 | 1.5d |  |
| 18 |  | Setup Postgresql Server | 1.5h | 2016-05-11 08:30 | 2016-05-11 10:00 | 17 | 1.5d |  |
| 19 |  | Training environments meeting | 2h | 2016-05-11 10:00 | 2016-05-11 12:00 | 18 | 1.5d |  |
| 20 | 1.1.4 | **Technology research** | 3d | 2016-05-11 13:00 | 2016-05-16 12:00 | 14 | 8d |  |
| 21 |  | Research technologies to be used in project | 1d | 2016-05-11 13:00 | 2016-05-12 12:00 |  | 3.5d |  |
| 22 |  | Study SpringMVC & Hibernate | 2d | 2016-05-12 13:00 | 2016-05-16 12:00 | 21 | 3.5d |  |
| 23 |  | Study AngularJS, jQuery, Bootstrap | 2d | 2016-05-12 13:00 | 2016-05-16 12:00 | 21 | 3.5d | start no earlier than 2016-05-12 08:00 |
| 24 | 1.1.5 | **Project Introduction** | 4d | 2016-05-12 08:00 | 2016-05-17 17:00 | 14 | 1.5d |  |
| 25 |  | Create "Project Introduction" document | 2d | 2016-05-12 08:00 | 2016-05-13 17:00 |  | 1.5d | finish no earlier than 2016-05-13 17:00 |
| 26 |  | Review "Project Introduction" document | 0.5d | 2016-05-16 08:00 | 2016-05-16 12:00 | 25 | 1d |  |
| 27 |  | Update "Project Introduction" document draft | 0.5d | 2016-05-16 13:00 | 2016-05-16 17:00 | 26 | 1d |  |
| 28 |  | Update "Project Introduction" based on instructor's comments | 1d | 2016-05-17 08:00 | 2016-05-17 17:00 | 27 | 1d |  |
| 29 |  | Summit Project Introduction | 0d | 2016-05-17 17:00 | 2016-05-17 17:00 | 28 | 1d |  |
| 30 | 1.1.6 | **Project Plan** | 5.5d | 2016-05-11 13:00 | 2016-05-18 17:00 | 14 | 5.5d |  |
| 31 |  | Develop project definition | 0.5d | 2016-05-11 13:00 | 2016-05-11 17:00 | 14 | 6d |  |
| 32 |  | Create CM Plan document | 0.5d | 2016-05-11 13:00 | 2016-05-11 17:00 | 14 | 6d |  |
| 33 |  | Develop Risk Register | 0.5d | 2016-05-11 13:00 | 2016-05-11 17:00 | 14 | 6d |  |
| 34 |  | Create Project plan document | 2d | 2016-05-11 13:00 | 2016-05-13 12:00 | 14 | 5.5d |  |
| 35 |  | Create Work BreakDown Structure | 0.5d | 2016-05-13 13:00 | 2016-05-13 17:00 | 34 | 5.5d |  |
| 36 |  | Create Project schedule document | 2d | 2016-05-16 08:00 | 2016-05-17 17:00 | 35 | 5.5d |  |
| 37 |  | Review & get comment of Project Plan | 0.5d | 2016-05-18 08:00 | 2016-05-18 12:00 | 36 | 5.5d |  |
| 38 |  | Update Project Plan documents (Schedule, Project Plan in MS Word, CM Plan) | 0.5d | 2016-05-18 13:00 | 2016-05-18 17:00 | 37 | 5.5d |  |
| 39 |  | Summit Project Plan Final version | 0d | 2016-05-18 17:00 | 2016-05-18 17:00 | 38 | 5.5d |  |
| 40 |  | Kick-off meeting | 0.5d | 2016-05-18 08:00 | 2016-05-18 12:00 | 24 | 6d |  |
| 41 | 1.1.8 | **Q&A sheet** | 1d | 2016-05-18 13:00 | 2016-05-19 12:00 | 24 | 5d |  |
| 42 |  | Create Q&A | 0.5d | 2016-05-18 13:00 | 2016-05-18 17:00 | 40 | 0.5d |  |
| 43 |  | Update Q&A sheet | 0.5d | 2016-05-19 08:00 | 2016-05-19 12:00 | 42 | 0.5d |  |
| 44 |  | Translate Q&A sheet | 0.5d | 2016-05-19 08:00 | 2016-05-19 12:00 | 42 | 0.5d |  |
| 45 | 1.1.9 | **Requirement** | 5d | 2016-05-18 08:00 | 2016-05-24 17:00 | 24 | 1d |  |
| 46 | 1.1.9.1 | **User Requirement** | 2.5d | 2016-05-18 08:00 | 2016-05-20 12:00 |  | 1d |  |
| 47 |  | Develop brief "User Requirements Specification" document | 1d | 2016-05-18 08:00 | 2016-05-18 17:00 |  | 1d |  |
| 48 |  | Peer review brief "User Requirements Specification" document | 0.5d | 2016-05-19 08:00 | 2016-05-19 12:00 | 47 | 1d |  |
| 49 |  | Update brief "User Requirements Specification" document | 0.5d | 2016-05-20 08:00 | 2016-05-20 12:00 | 48 | 0.5d | start no earlier than 2016-05-20 08:00 |
| 50 | 1.1.9.2 | **Mock-up screens** | 2.5d | 2016-05-20 13:00 | 2016-05-24 17:00 | 46 | 1d |  |
| 51 |  | Collect business requirements and processes | 0.5d | 2016-05-20 13:00 | 2016-05-20 17:00 |  | 0.5d |  |
| 52 |  | Develop main features' mockup screens | 1.5d | 2016-05-23 08:00 | 2016-05-24 12:00 | 51 | 0.5d |  |
| 53 |  | Review and edit screen main features' mockup screens | 0.5d | 2016-05-24 13:00 | 2016-05-24 17:00 | 52 | 0.5d |  |
| 54 |  | Complete main features' mockup screens | 0d | 2016-05-24 17:00 | 2016-05-24 17:00 | 53 | 2d |  |
| 55 |  | Phase meeting | 0.5d | 2016-05-25 08:00 | 2016-05-25 12:00 | 45 | 2d | start no earlier than 2016-05-25 08:00 |
| 56 | 1.2 | **Solution** | 20.5d | 2016-05-25 13:00 | 2016-06-22 17:00 | 2 | 1d |  |
| 57 | 1.2.1 | **Sofware Requirement Specification** | 20d | 2016-05-25 13:00 | 2016-06-22 12:00 |  | 1d |  |
| 58 | 1.2.1.1 | **Functional Requirement Specification** | 19d | 2016-05-25 13:00 | 2016-06-21 12:00 |  | 1d |  |
| 59 | 1.2.1.1.1 | **Core Module** | 12d | 2016-05-25 13:00 | 2016-06-10 12:00 |  | 1d |  |
| 60 |  | Authentication module | 1d | 2016-05-25 13:00 | 2016-05-26 12:00 |  | 2d |  |
| 61 |  | Account Management module | 2d | 2016-05-26 13:00 | 2016-05-30 12:00 | 60 | 2d |  |
| 62 |  | Learning module | 4d | 2016-05-30 13:00 | 2016-06-03 12:00 | 61 | 2d |  |
| 63 |  | Question Bank module | 2d | 2016-06-03 13:00 | 2016-06-07 12:00 | 62 | 2d |  |
| 64 |  | Examination module | 2d | 2016-06-07 13:00 | 2016-06-09 12:00 | 63 | 2d |  |
| 65 |  | Content Reporting module | 0.5d | 2016-06-09 13:00 | 2016-06-09 17:00 | 64 | 2d |  |
| 66 |  | Statistic module | 0.5d | 2016-06-10 08:00 | 2016-06-10 12:00 | 65 | 2d |  |
| 67 | 1.2.1.1.2 | **Dictionary Module** | 1d | 2016-06-20 13:00 | 2016-06-21 12:00 | 59FS+6d | 1d |  |
| 68 |  | Word Looking Up module | 1d | 2016-06-20 13:00 | 2016-06-21 12:00 | 66 | 2d |  |
| 69 | 1.2.1.2 | **Non-functional Requirements Specification** | 1d | 2016-06-21 13:00 | 2016-06-22 12:00 | 67 | 1d |  |
| 70 |  | Develop User Interface requirements | 1d | 2016-06-21 13:00 | 2016-06-22 12:00 |  | 2d |  |

| ID | WBS | Task | Duration | Start | Finish | Predecessors | Total float | Constraint |
| --- | --- | --- | --- | --- | --- | --- | --- | --- |
| 71 |  | Develop Performance requirements | 1d | 2016-06-21 13:00 | 2016-06-22 12:00 |  | 2d |  |
| 72 | 1.2.2 | **System Architectural Design** | 2d | 2016-05-25 13:00 | 2016-05-27 12:00 | 2 | 14d |  |
| 73 |  | Define the system structure and unify system features | 1d | 2016-05-25 13:00 | 2016-05-26 12:00 |  | 15d |  |
| 74 |  | Study the common System Architetures | 0.5d | 2016-05-26 13:00 | 2016-05-26 17:00 | 73 | 15d |  |
| 75 |  | Make choice of System Architeture | 0.5d | 2016-05-27 08:00 | 2016-05-27 12:00 | 74 | 15d |  |
| 76 |  | Complete Architecture Design version 1.0 | 0d | 2016-05-27 12:00 | 2016-05-27 12:00 | 75 | 15d |  |
| 77 | 1.2.3 | **Detailed Design** | 5.5d | 2016-05-27 13:00 | 2016-06-03 17:00 | 72 | 14d |  |
| 78 | 1.2.3.1 | **Database design** | 2d | 2016-05-27 13:00 | 2016-05-31 12:00 |  | 17.5d |  |
| 79 |  | Organize information to Database tables | 0.5d | 2016-05-27 13:00 | 2016-05-27 17:00 |  | 18.5d |  |
| 80 |  | Define object in Database | 0.5d | 2016-05-30 08:00 | 2016-05-30 12:00 | 79 | 18.5d |  |
| 81 |  | Define relationships in Database | 0.5d | 2016-05-30 13:00 | 2016-05-30 17:00 | 80 | 18.5d |  |
| 82 |  | Refine Database design | 0.5d | 2016-05-31 08:00 | 2016-05-31 12:00 | 81 | 18.5d |  |
| 83 | 1.2.3.2 | **Screen design** | 4d | 2016-05-27 13:00 | 2016-06-02 12:00 |  | 15.5d |  |
| 84 |  | Create Screen Flow digram | 1d | 2016-05-27 13:00 | 2016-05-30 12:00 | 72 | 16.5d | start no earlier than 2016-05-27 08:00 |
| 85 |  | Create Screen Definition | 1d | 2016-05-30 13:00 | 2016-05-31 12:00 | 84 | 16.5d |  |
| 86 |  | Create Screen Design | 2d | 2016-05-31 13:00 | 2016-06-02 12:00 | 85 | 16.5d |  |
| 87 | 1.2.3.3 | **Class/Component Design** | 4.5d | 2016-05-27 13:00 | 2016-06-02 17:00 |  | 14d |  |
| 88 |  | List components of the system | 0.5d | 2016-05-27 13:00 | 2016-05-27 17:00 |  | 15d |  |
| 89 |  | Create architecture design | 2d | 2016-05-30 08:00 | 2016-05-31 17:00 | 88 | 15d |  |
| 90 |  | Create class diagram | 2d | 2016-06-01 08:00 | 2016-06-02 17:00 | 89 | 15d |  |
| 91 |  | Create review checklists | 1d | 2016-06-03 08:00 | 2016-06-03 17:00 | 90 | 15d |  |
| 92 | 1.2.4 | **Project Management** | 2d | 2016-05-27 13:00 | 2016-05-31 12:00 | 72 | 17.5d |  |
| 93 |  | Update project plan | 2d | 2016-05-27 13:00 | 2016-05-31 12:00 |  | 18.5d |  |
| 94 | 1.2.5 | **Test** | 3.5d | 2016-05-25 13:00 | 2016-05-30 17:00 |  | 18d |  |
| 95 |  | Create Test plan | 1d | 2016-05-25 13:00 | 2016-05-26 12:00 |  | 20.5d |  |
| 96 |  | Review + Update Test plan | 1d | 2016-05-26 13:00 | 2016-05-27 12:00 | 95 | 20.5d |  |
| 97 |  | Test plan approved | 0d | 2016-05-27 12:00 | 2016-05-27 12:00 | 96 | 20.5d |  |
| 98 |  | Create test cases | 2d | 2016-05-27 08:00 | 2016-05-30 17:00 |  | 19d | start no earlier than 2016-05-27 08:00 |
| 99 |  | Phase meeting | 0.5d | 2016-06-22 13:00 | 2016-06-22 17:00 | 57 | 2d |  |
| 100 | 1.3 | **Construction** | 41d | 2016-06-22 17:00 | 2016-08-18 17:00 | 56 | 1d |  |
| 101 | 1.3.1 | **Design** | 2d | 2016-06-23 08:00 | 2016-06-24 17:00 |  | 1d |  |
| 102 |  | Refine Design document | 2d | 2016-06-23 08:00 | 2016-06-24 17:00 |  | 1d |  |
| 103 | 1.3.2 | **Coding** | 31d | 2016-06-27 08:00 | 2016-08-08 17:00 | 101 | 1d |  |
| 104 |  | Build prototype | 2d | 2016-06-27 08:00 | 2016-06-28 17:00 |  | 1d |  |
| 105 |  | Prototype approved | 0d | 2016-06-28 17:00 | 2016-06-28 17:00 | 104 | 2d |  |
| 106 | 1.3.2.3 | **Coding product** | 29d | 2016-06-29 08:00 | 2016-08-08 17:00 | 105 | 1d |  |
| 107 | 1.3.2.3.1 | **Coding Fronent Modules** | 28d | 2016-06-29 08:00 | 2016-08-05 17:00 |  | 2d |  |
| 108 | 1.3.2.3.1.1 | **Core Module** | 26d | 2016-06-29 08:00 | 2016-08-03 17:00 |  | 2d |  |
| 109 |  | Common module | 2d | 2016-06-29 08:00 | 2016-06-30 17:00 |  | 2d |  |
| 110 |  | Authentication module | 1d | 2016-07-01 08:00 | 2016-07-01 17:00 | 109 | 2d |  |
| 111 |  | Account Management module | 4d | 2016-07-04 08:00 | 2016-07-07 17:00 | 110 | 2d |  |
| 112 |  | Learning module | 8d | 2016-07-08 08:00 | 2016-07-19 17:00 | 111 | 2d |  |
| 113 |  | Question Bank module | 4d | 2016-07-20 08:00 | 2016-07-25 17:00 | 112 | 2d |  |
| 114 |  | Examination module | 4d | 2016-07-26 08:00 | 2016-07-29 17:00 | 113 | 2d |  |
| 115 |  | Content Reporting module | 1d | 2016-08-01 08:00 | 2016-08-01 17:00 | 114 | 2d |  |
| 116 |  | Statistic module | 2d | 2016-08-02 08:00 | 2016-08-03 17:00 | 115 | 2d |  |
| 117 | 1.3.2.3.1.2 | **Dictionary Module** | 2d | 2016-08-04 08:00 | 2016-08-05 17:00 |  | 2d |  |
| 118 |  | Word Looking Up module | 2d | 2016-08-04 08:00 | 2016-08-05 17:00 | 116 | 2d |  |
| 119 | 1.3.2.3.2 | **Coding Backend Modules** | 28d | 2016-06-30 08:00 | 2016-08-08 17:00 | 105FS+1d | 1d |  |
| 120 | 1.3.2.3.2.1 | **Core Module** | 24d | 2016-06-30 08:00 | 2016-08-02 17:00 |  | 1d |  |
| 121 |  | Model Component | 2d | 2016-06-30 08:00 | 2016-07-01 17:00 |  | 1d |  |
| 122 |  | DAO Component | 4d | 2016-07-04 08:00 | 2016-07-07 17:00 | 121 | 1d |  |
| 123 |  | Service Component | 8d | 2016-07-08 08:00 | 2016-07-19 17:00 | 122 | 1d |  |
| 124 |  | Controller Component | 8d | 2016-07-20 08:00 | 2016-07-29 17:00 | 123 | 1d |  |
| 125 |  | Integrate components | 2d | 2016-08-01 08:00 | 2016-08-02 17:00 | 124 | 1d |  |
| 126 | 1.3.2.3.2.2 | **Dictionary Module** | 4d | 2016-08-03 08:00 | 2016-08-08 17:00 |  | 1d |  |
| 127 |  | Model Component | 0.5d | 2016-08-03 08:00 | 2016-08-03 12:00 | 125 | 1d |  |
| 128 |  | DAO Component | 0.5d | 2016-08-03 13:00 | 2016-08-03 17:00 | 127 | 1d |  |
| 129 |  | Service Component | 1d | 2016-08-04 08:00 | 2016-08-04 17:00 | 128 | 1d |  |
| 130 |  | Controller Component | 1d | 2016-08-05 08:00 | 2016-08-05 17:00 | 129 | 1d |  |
| 131 |  | Integrate components | 1d | 2016-08-08 08:00 | 2016-08-08 17:00 | 130 | 1d |  |
| 132 |  | Product development completes | 0d | 2016-08-08 17:00 | 2016-08-08 17:00 | 106 | 6d |  |
| 133 | 1.3.3 | **Testing** | 40d | 2016-06-22 17:00 | 2016-08-17 17:00 | 94 | 1d |  |
| 134 | 1.3.3.1 | **Writing Test cases (Continue)** | 8d | 2016-06-23 08:00 | 2016-07-04 17:00 |  | 33d |  |
| 135 |  | Create Integration Test Case | 2d | 2016-06-23 08:00 | 2016-06-24 17:00 |  | 33d |  |
| 136 |  | Update and review Integration Test Case | 2d | 2016-06-27 08:00 | 2016-06-28 17:00 | 135 | 33d |  |
| 137 |  | Create System Test Case | 2d | 2016-06-29 08:00 | 2016-06-30 17:00 | 136 | 33d |  |
| 138 |  | Update and review System Test Case | 2d | 2016-07-01 08:00 | 2016-07-04 17:00 | 137 | 33d |  |
| 139 |  | Writing Test cases completes | 0d | 2016-06-22 17:00 | 2016-06-22 17:00 |  | 42d |  |
| 140 | 1.3.3.3 | **Execute Test** | 7d | 2016-08-09 08:00 | 2016-08-17 17:00 | 106 | 1d |  |

| ID | WBS | Task | Duration | Start | Finish | Predecessors | Total float | Constraint |
| --- | --- | --- | --- | --- | --- | --- | --- | --- |
| 141 | 1.3.3.3.1 | **Execute Test Frontend** | 4d | 2016-08-09 08:00 | 2016-08-12 17:00 |  | 4d |  |
| 142 |  | Execute Integration Test | 2d | 2016-08-09 08:00 | 2016-08-10 17:00 |  | 4d |  |
| 143 |  | Fix bug Integration Test | 2d | 2016-08-11 08:00 | 2016-08-12 17:00 | 142 | 4d |  |
| 144 | 1.3.3.3.2 | **Execute Test Backend** | 4d | 2016-08-09 08:00 | 2016-08-12 17:00 | 141SS | 1d |  |
| 145 |  | Execute Integration Test | 2d | 2016-08-09 08:00 | 2016-08-10 17:00 |  | 2d |  |
| 146 |  | Fix bug Integration Test | 2d | 2016-08-11 08:00 | 2016-08-12 17:00 | 145 | 4d |  |
| 147 |  | Execute System Test | 2d | 2016-08-11 08:00 | 2016-08-12 17:00 | 145 | 1d |  |
| 148 |  | Fix bug System Test | 2d | 2016-08-15 08:00 | 2016-08-16 17:00 | 147 | 1d |  |
| 149 |  | Create Test Report first verstion | 1d | 2016-08-17 08:00 | 2016-08-17 17:00 | 148 | 1d |  |
| 150 |  | Complete Testing | 0d | 2016-08-17 17:00 | 2016-08-17 17:00 | 149 | 2d |  |
| 151 | 1.3.4 | **User Manual** | 3d | 2016-08-09 08:00 | 2016-08-11 17:00 | 103 | 6d |  |
| 152 |  | Create Installation guideline | 1d | 2016-08-09 08:00 | 2016-08-09 17:00 |  | 6d |  |
| 153 |  | Create User guideline | 2d | 2016-08-09 08:00 | 2016-08-10 17:00 | 152SS | 6d |  |
| 154 |  | Review + Update guidelines | 1d | 2016-08-11 08:00 | 2016-08-11 17:00 | 153 | 6d |  |
| 155 | 1.3.5 | **Manage development** | 5d | 2016-06-27 08:00 | 2016-07-01 17:00 | 103SS | 35d |  |
| 156 | 1.3.5.1 | **Manage scope/cost/time** | 5d | 2016-06-27 08:00 | 2016-07-01 17:00 |  | 35d |  |
| 157 |  | Monitor product changes | 1w | 2016-06-27 08:00 | 2016-07-01 17:00 |  | 35d |  |
| 158 |  | Monitor project changes | 1w | 2016-06-27 08:00 | 2016-07-01 17:00 |  | 35d |  |
| 159 | 1.3.5.2 | **Manage communications** | 1d | 2016-06-27 08:00 | 2016-06-27 17:00 |  | 39d |  |
| 160 | 1.3.5.2.1 | **Implement communications methods and strategies** | 1d | 2016-06-27 08:00 | 2016-06-27 17:00 |  | 39d |  |
| 161 |  | Select tools | 1d | 2016-06-27 08:00 | 2016-06-27 17:00 |  | 39d |  |
| 162 | 1.3.5.2.2 | **Distribute information** | 1d | 2016-06-27 08:00 | 2016-06-27 17:00 |  | 39d |  |
| 163 |  | Attend team meeting | 1d | 2016-06-27 08:00 | 2016-06-27 17:00 |  | 39d |  |
| 164 |  | Create status reports | 1d | 2016-06-27 08:00 | 2016-06-27 17:00 |  | 39d |  |
| 165 |  | Create Weekly Report | 1d | 2016-06-27 08:00 | 2016-06-27 17:00 |  | 39d |  |
| 166 |  | Resolve communications problems | 1d | 2016-06-27 08:00 | 2016-06-27 17:00 |  | 39d |  |
| 167 | 1.3.5.3 | **Manage quality control** | 1d | 2016-06-27 08:00 | 2016-06-27 17:00 |  | 39d |  |
| 168 |  | Monitor product quality | 1d | 2016-06-27 08:00 | 2016-06-27 17:00 |  | 39d |  |
| 169 | 1.3.5.3.2 | **Monitor project quality** | 1d | 2016-06-27 08:00 | 2016-06-27 17:00 |  | 39d |  |
| 170 |  | Implement process improvements | 1d | 2016-06-27 08:00 | 2016-06-27 17:00 |  | 39d |  |
| 171 | 1.3.5.4 | **Manage risk** | 1d | 2016-06-27 08:00 | 2016-06-27 17:00 |  | 39d |  |
| 172 |  | Monitor risks | 1d | 2016-06-27 08:00 | 2016-06-27 17:00 |  | 39d |  |
| 173 |  | Specify responses | 1d | 2016-06-27 08:00 | 2016-06-27 17:00 |  | 39d |  |
| 174 |  | Manage integration | 1d | 2016-06-27 08:00 | 2016-06-27 17:00 |  | 39d |  |
| 175 |  | Phase meeting | 0.5d | 2016-08-18 08:00 | 2016-08-18 12:00 | 133 | 1d |  |
| 176 |  | Create final report + CD | 0.5d | 2016-08-18 13:00 | 2016-08-18 17:00 | 175 | 1d |  |
| 177 | 1.4 | **Termination** | 5d | 2016-08-19 08:00 | 2016-08-25 17:00 | 100 | 1d |  |
| 178 | 1.4.1 | **Pre-Closing** | 2d | 2016-08-19 08:00 | 2016-08-22 17:00 |  | 1d |  |
| 179 |  | Training presentation | 2d | 2016-08-19 08:00 | 2016-08-22 17:00 |  | 1d |  |
| 180 | 1.4.2 | **Closing** | 3d | 2016-08-23 08:00 | 2016-08-25 17:00 | 178 | 1d |  |
| 181 |  | Prepare for presentation | 2d | 2016-08-23 08:00 | 2016-08-24 17:00 |  | 1d |  |
| 182 |  | Represent Capstone Project and Completed | 1d | 2016-08-25 08:00 | 2016-08-25 17:00 | 181 | 1d | finish no earlier than 2015-08-26 17:00 |

## Version 2 (saved 2016-07-31)

Note of the change: Update doc

Last finish stays 2016-08-26.

Changed:

| ID | Task | Start | Finish | Total float | Predecessors |
| --- | --- | --- | --- | --- | --- |
| 100 | **Construction** | 2016-06-22 17:00 → 2016-06-23 08:00 (+1d) |  |  |  |
| 133 | **Testing** | 2016-06-22 17:00 → 2016-06-23 08:00 (+1d) |  |  |  |
| 139 | Writing Test cases completes | 2016-06-22 17:00 → 2016-07-04 17:00 (+12d) | 2016-06-22 17:00 → 2016-07-04 17:00 (+12d) | 42d → 33d | none → 134 |

## Version 3 (saved 2016-08-22)

Note of the change: Add plan schedule

Last finish 2016-08-26 → 2016-09-01 (+6d).

Added:

| ID | Task | Duration | Start | Finish | Predecessors | Resources |
| --- | --- | --- | --- | --- | --- | --- |
| 56 | Finish initiation phase | 0d | 2016-05-09 11:00 | 2016-05-09 11:00 |  |  |
| 71 | Submit SRS | 0d | 2016-06-01 12:00 | 2016-06-01 12:00 | 68 |  |
| 92 | Submit details design | 0d | 2016-05-27 12:00 | 2016-05-27 12:00 |  |  |
| 95 | **Coding** | 2d | 2016-05-25 13:00 | 2016-05-27 12:00 |  |  |
| 102 | **Writing Test cases** | 7d | 2016-06-20 13:00 | 2016-06-29 12:00 | 100FS+6d |  |
| 106 | Finish solution phase | 0d | 2016-05-25 12:00 | 2016-05-25 12:00 |  |  |
| 171 | Create presentation slide | 1d | 2016-08-17 13:00 | 2016-08-18 12:00 |  | LinhNH |
| 172 | Create final report | 4d | 2016-08-17 13:00 | 2016-08-23 12:00 | 166 | MinhNN |
| 173 | Write CD + Print documents | 1d | 2016-08-23 13:00 | 2016-08-24 12:00 | 172 | TEAM |
| 175 | Finish Construction Phase | 0d | 2016-06-29 12:00 | 2016-06-29 12:00 |  |  |
| 182 | Finish Capstone Project | 0d | 2016-09-01 17:00 | 2016-09-01 17:00 | 176 |  |

Removed: 67 Dictionary Module; 68 Word Looking Up module; 98 Create test cases; 117 Dictionary Module; 118 Word Looking Up module; 126 Dictionary Module; 127 Model Component; 128 DAO Component; 129 Service Component; 130 Controller Component; 131 Integrate components

Changed:

| ID | Task | Start | Finish | Duration | Total float | Predecessors | Other |
| --- | --- | --- | --- | --- | --- | --- | --- |
| 1 | **Veazy** |  | 2016-08-26 17:00 → 2016-09-01 17:00 (+6d) | 80d → 84d | none → 0d |  |  |
| 8 | Clarify technical requirements |  |  |  | 1.5d → 1d |  | resources TEAM → TungDT |
| 9 | Clarify rules in Team |  |  |  | 1.5d → 1d |  | resources TEAM → QuanNH |
| 20 | **Technology research** |  | 2016-05-16 12:00 → 2016-05-12 17:00 (-4d) | 3d → 1.5d | 8d → 1d |  |  |
| 21 | Research technologies to be used in project |  | 2016-05-12 12:00 → 2016-05-11 17:00 (-1d) | 1d → 0.5d | 3.5d → 1d |  |  |
| 22 | Study SpringMVC & Hibernate | 2016-05-12 13:00 → 2016-05-12 08:00 | 2016-05-16 12:00 → 2016-05-12 17:00 (-4d) | 2d → 1d | 3.5d → 1d |  | resources BackendTeam → LinhNH; TungDT |
| 23 | Study AngularJS, jQuery, Bootstrap | 2016-05-12 13:00 → 2016-05-12 08:00 | 2016-05-16 12:00 → 2016-05-12 17:00 (-4d) | 2d → 1d | 3.5d → 1d |  | resources FrontendTeam → QuanNH; ThangPD |
| 24 | **Project Introduction** | 2016-05-12 08:00 → 2016-05-12 13:00 | 2016-05-17 17:00 → 2016-05-17 12:00 | 4d → 3d | 1.5d → 7d | 14 → 21 |  |
| 25 | Create "Project Introduction" document | 2016-05-12 08:00 → 2016-05-12 13:00 |  | 2d → 1.5d | 1.5d → 7d |  | resources DocTeam → DuyNT |
| 27 | Update "Project Introduction" document draft |  |  |  | 1d → 7d |  | resources DocTeam → DuyNT |
| 28 | Update "Project Introduction" based on instructor's comments |  | 2016-05-17 17:00 → 2016-05-17 12:00 | 1d → 0.5d | 1d → 7d |  | resources DocTeam → DuyNT |
| 29 | Summit Project Introduction | 2016-05-17 17:00 → 2016-05-17 12:00 | 2016-05-17 17:00 → 2016-05-17 12:00 |  | 1d → 7d |  |  |
| 30 | **Requirement** | 2016-05-18 08:00 → 2016-05-13 08:00 (-5d) | 2016-05-24 17:00 → 2016-05-19 12:00 (-5d) | 5d → 4.5d |  | 24 → 20 |  |
| 31 | **User Requirement** | 2016-05-18 08:00 → 2016-05-13 08:00 (-5d) | 2016-05-20 12:00 → 2016-05-16 17:00 (-4d) | 2.5d → 2d |  |  |  |
| 32 | Develop brief "User Requirements Specification" document | 2016-05-18 08:00 → 2016-05-13 08:00 (-5d) | 2016-05-18 17:00 → 2016-05-13 17:00 (-5d) |  |  | none → 20 | resources DocTeam → QuanNH; ThangPD |
| 33 | Peer review brief "User Requirements Specification" document | 2016-05-19 08:00 → 2016-05-16 08:00 (-3d) | 2016-05-19 12:00 → 2016-05-16 12:00 (-3d) |  |  |  | resources DocTeam → LinhNH; TungDT |
| 34 | Update brief "User Requirements Specification" document | 2016-05-20 08:00 → 2016-05-16 13:00 (-4d) | 2016-05-20 12:00 → 2016-05-16 17:00 (-4d) |  | 0.5d → 1d |  | constraint start no earlier than 2016-05-20 08:00 → none; resources DocTeam → QuanNH; ThangPD |
| 35 | **Mock-up screens** | 2016-05-20 13:00 → 2016-05-17 08:00 (-3d) | 2016-05-24 17:00 → 2016-05-19 12:00 (-5d) |  | 1d → 4d |  |  |
| 36 | Collect business requirements and processes | 2016-05-20 13:00 → 2016-05-17 08:00 (-3d) | 2016-05-20 17:00 → 2016-05-17 12:00 (-3d) |  | 0.5d → 4d |  |  |
| 37 | Develop main features' mockup screens | 2016-05-23 08:00 → 2016-05-17 13:00 (-6d) | 2016-05-24 12:00 → 2016-05-18 17:00 (-6d) |  | 0.5d → 4d |  |  |
| 38 | Review and edit screen main features' mockup screens | 2016-05-24 13:00 → 2016-05-19 08:00 (-5d) | 2016-05-24 17:00 → 2016-05-19 12:00 (-5d) |  | 0.5d → 4d |  |  |
| 39 | Complete main features' mockup screens | 2016-05-24 17:00 → 2016-05-19 12:00 (-5d) | 2016-05-24 17:00 → 2016-05-19 12:00 (-5d) |  | 2d → 4d |  |  |
| 40 | **Project Plan** | 2016-05-11 13:00 → 2016-05-17 08:00 (+6d) | 2016-05-18 17:00 → 2016-05-24 12:00 (+6d) |  | 5.5d → 1d | 14 → 31 |  |
| 41 | Develop project definition | 2016-05-11 13:00 → 2016-05-17 08:00 (+6d) | 2016-05-11 17:00 → 2016-05-17 12:00 (+6d) |  |  |  |  |
| 42 | Create CM Plan document | 2016-05-11 13:00 → 2016-05-17 08:00 (+6d) | 2016-05-11 17:00 → 2016-05-17 12:00 (+6d) |  |  |  |  |
| 43 | Develop Risk Register | 2016-05-11 13:00 → 2016-05-17 08:00 (+6d) | 2016-05-11 17:00 → 2016-05-17 12:00 (+6d) |  |  |  |  |
| 44 | Create Project plan document | 2016-05-11 13:00 → 2016-05-17 08:00 (+6d) | 2016-05-13 12:00 → 2016-05-18 17:00 (+5d) |  | 5.5d → 1d |  |  |
| 45 | Create Work BreakDown Structure | 2016-05-13 13:00 → 2016-05-19 08:00 (+6d) | 2016-05-13 17:00 → 2016-05-19 12:00 (+6d) |  | 5.5d → 1d |  |  |
| 46 | Create Project schedule document | 2016-05-16 08:00 → 2016-05-19 13:00 (+3d) | 2016-05-17 17:00 → 2016-05-23 12:00 (+6d) |  | 5.5d → 1d |  |  |
| 47 | Review & get comment of Project Plan | 2016-05-18 08:00 → 2016-05-23 13:00 (+5d) | 2016-05-18 12:00 → 2016-05-23 17:00 (+5d) |  | 5.5d → 1d |  |  |
| 48 | Update Project Plan documents (Schedule, Project Plan in MS Word, CM Plan) | 2016-05-18 13:00 → 2016-05-24 08:00 (+6d) | 2016-05-18 17:00 → 2016-05-24 12:00 (+6d) |  | 5.5d → 1d |  |  |
| 49 | Summit Project Plan Final version | 2016-05-18 17:00 → 2016-05-24 12:00 (+6d) | 2016-05-18 17:00 → 2016-05-24 12:00 (+6d) |  | 5.5d → 1d |  |  |
| 50 | **Q&A sheet** | 2016-05-18 13:00 → 2016-05-19 13:00 (+1d) | 2016-05-19 12:00 → 2016-05-20 12:00 (+1d) |  | 5d → 4d | 24 → 30 |  |
| 51 | Create Q&A | 2016-05-18 13:00 → 2016-05-19 13:00 (+1d) | 2016-05-18 17:00 → 2016-05-19 17:00 (+1d) |  | 0.5d → 4d | 54 → 30 |  |
| 52 | Update Q&A sheet | 2016-05-19 08:00 → 2016-05-20 08:00 (+1d) | 2016-05-19 12:00 → 2016-05-20 12:00 (+1d) |  | 0.5d → 4d |  |  |
| 53 | Translate Q&A sheet | 2016-05-19 08:00 → 2016-05-20 08:00 (+1d) | 2016-05-19 12:00 → 2016-05-20 12:00 (+1d) |  | 0.5d → 4d |  |  |
| 54 | Kick-off meeting | 2016-05-18 08:00 → 2016-05-24 13:00 (+6d) | 2016-05-18 12:00 → 2016-05-24 17:00 (+6d) |  | 6d → 1d | 24 → 40 |  |
| 55 | Phase meeting |  |  |  | 2d → 1d | 30 → 54 | constraint start no earlier than 2016-05-25 08:00 → none |
| 57 | **Solution** | 2016-05-25 13:00 → 2016-05-25 12:00 | 2016-06-22 17:00 → 2016-06-29 12:00 (+7d) | 20.5d → 25d |  |  |  |
| 58 | **Sofware Requirement Specification** |  | 2016-06-22 12:00 → 2016-06-01 12:00 (-21d) | 20d → 5d | 1d → 3d |  |  |
| 59 | **Functional Requirement Specification** |  | 2016-06-21 12:00 → 2016-05-31 12:00 (-21d) | 19d → 4d | 1d → 3d |  |  |
| 60 | **Core Module** |  | 2016-06-10 12:00 → 2016-05-31 12:00 (-10d) | 12d → 4d | 1d → 3d |  |  |
| 61 | Authentication module |  |  |  | 2d → 3d | none → 2 | resources DocTeam → DuyNT |
| 62 | Account Management module | 2016-05-26 13:00 → 2016-05-25 13:00 (-1d) | 2016-05-30 12:00 → 2016-05-27 12:00 (-3d) |  | 2d → 3d | 61 → 2 | resources DocTeam → QuanNH |
| 63 | Learning module | 2016-05-30 13:00 → 2016-05-25 13:00 (-5d) | 2016-06-03 12:00 → 2016-05-31 12:00 (-3d) |  | 2d → 3d | 62 → 2 | resources DocTeam → ThangPD |
| 64 | Question Bank module | 2016-06-03 13:00 → 2016-05-26 13:00 (-8d) | 2016-06-07 12:00 → 2016-05-30 12:00 (-8d) |  | 2d → 3d | 63 → 61 | resources DocTeam → DuyNT |
| 65 | Examination module | 2016-06-07 13:00 → 2016-05-27 13:00 (-11d) | 2016-06-09 12:00 → 2016-05-31 12:00 (-9d) |  | 2d → 3d | 64 → 62 | resources DocTeam → QuanNH |
| 66 | Content Reporting module | 2016-06-09 13:00 → 2016-05-30 13:00 (-10d) | 2016-06-09 17:00 → 2016-05-30 17:00 (-10d) |  | 2d → 3d | 65 → 64 | resources DocTeam → DuyNT |
| 67 | Statistic module | 2016-06-10 08:00 → 2016-05-31 08:00 (-10d) | 2016-06-10 12:00 → 2016-05-31 12:00 (-10d) |  | 2d → 3d |  | resources DocTeam → DuyNT |
| 68 | **Non-functional Requirements Specification** | 2016-06-21 13:00 → 2016-05-31 13:00 (-21d) | 2016-06-22 12:00 → 2016-06-01 12:00 (-21d) |  | 1d → 3d | Dictionary Module → 60 |  |
| 69 | Develop User Interface requirements | 2016-06-21 13:00 → 2016-05-31 13:00 (-21d) | 2016-06-22 12:00 → 2016-06-01 12:00 (-21d) |  | 2d → 3d |  | resources DocTeam → QuanNH |
| 70 | Develop Performance requirements | 2016-06-21 13:00 → 2016-05-31 13:00 (-21d) | 2016-06-22 12:00 → 2016-06-01 12:00 (-21d) |  | 2d → 3d | none → 60 | resources DocTeam → ThangPD |
| 73 | Define the system structure and unify system features |  |  |  | 15d → 1d |  | resources DevTeam → MinhNN |
| 74 | Study the common System Architetures |  |  |  | 15d → 1d |  | resources DevTeam → MinhNN |
| 75 | Make choice of System Architeture |  |  |  | 15d → 1d |  | resources DevTeam → MinhNN |
| 77 | **Detailed Design** | 2016-05-27 13:00 → 2016-05-27 12:00 | 2016-06-03 17:00 → 2016-06-08 12:00 (+5d) | 5.5d → 8d | 14d → 1d |  |  |
| 78 | **Database design** | 2016-05-27 13:00 → 2016-06-01 13:00 (+5d) | 2016-05-31 12:00 → 2016-06-06 12:00 (+6d) | 2d → 3d | 17.5d → 3d | none → 58 |  |
| 79 | Organize information to Database tables | 2016-05-27 13:00 → 2016-06-01 13:00 (+5d) | 2016-05-27 17:00 → 2016-06-01 17:00 (+5d) |  | 18.5d → 3d |  | resources BackendTeam → LinhNH |
| 80 | Define object in Database | 2016-05-30 08:00 → 2016-06-02 08:00 (+3d) | 2016-05-30 12:00 → 2016-06-02 17:00 (+3d) | 0.5d → 1d | 18.5d → 3d |  | resources BackendTeam → LinhNH |
| 81 | Define relationships in Database | 2016-05-30 13:00 → 2016-06-03 08:00 (+4d) | 2016-05-30 17:00 → 2016-06-03 17:00 (+4d) | 0.5d → 1d | 18.5d → 3d |  | resources BackendTeam → LinhNH |
| 82 | Refine Database design | 2016-05-31 08:00 → 2016-06-06 08:00 (+6d) | 2016-05-31 12:00 → 2016-06-06 12:00 (+6d) |  | 18.5d → 3d |  | resources BackendTeam → LinhNH |
| 83 | **Screen design** |  | 2016-06-02 12:00 → 2016-06-07 12:00 (+5d) | 4d → 7d | 15.5d → 2d |  |  |
| 84 | Create Screen Flow digram |  |  |  | 16.5d → 2d | 72 → 35 | constraint start no earlier than 2016-05-27 08:00 → none; resources FrontendTeam → QuanNH |
| 85 | Create Screen Definition |  | 2016-05-31 12:00 → 2016-06-01 12:00 (+1d) | 1d → 2d | 16.5d → 2d |  | resources FrontendTeam → QuanNH |
| 86 | Create Screen Design | 2016-05-31 13:00 → 2016-06-01 13:00 (+1d) | 2016-06-02 12:00 → 2016-06-07 12:00 (+5d) | 2d → 4d | 16.5d → 2d |  | resources FrontendTeam → QuanNH |
| 87 | **Class/Component Design** |  | 2016-06-02 17:00 → 2016-06-07 12:00 (+5d) | 4.5d → 7d | 14d → 1d | none → 72 |  |
| 88 | List components of the system |  | 2016-05-27 17:00 → 2016-05-30 12:00 (+3d) | 0.5d → 1d | 15d → 1d |  | resources DevTeam → TungDT |
| 89 | Create architecture design | 2016-05-30 08:00 → 2016-05-30 13:00 | 2016-05-31 17:00 → 2016-06-01 12:00 (+1d) |  | 15d → 1d |  | resources DevTeam → TungDT |
| 90 | Create class diagram | 2016-06-01 08:00 → 2016-06-01 13:00 | 2016-06-02 17:00 → 2016-06-07 12:00 (+5d) | 2d → 4d | 15d → 1d |  | resources DevTeam → TungDT |
| 91 | Create review checklists | 2016-06-03 08:00 → 2016-06-07 13:00 (+4d) | 2016-06-03 17:00 → 2016-06-08 12:00 (+5d) |  | 15d → 1d |  | resources DevTeam → DuyNT |

| ID | Task | Start | Finish | Duration | Total float | Predecessors | Other |
| --- | --- | --- | --- | --- | --- | --- | --- |
| 96 | Build prototype | 2016-06-27 08:00 → 2016-05-25 13:00 (-33d) | 2016-06-28 17:00 → 2016-05-27 12:00 (-32d) |  | 1d → 30d |  | resources DevTeam → TungDT |
| 97 | Prototype approved | 2016-06-28 17:00 → 2016-05-27 12:00 (-32d) | 2016-06-28 17:00 → 2016-05-27 12:00 (-32d) |  | 2d → 30d |  |  |
| 98 | **Test** | 2016-05-25 13:00 → 2016-06-08 13:00 (+14d) | 2016-05-30 17:00 → 2016-06-29 12:00 (+30d) | 3.5d → 15d | 18d → 1d | none → 77 |  |
| 99 | Create Test plan | 2016-05-25 13:00 → 2016-06-08 13:00 (+14d) | 2016-05-26 12:00 → 2016-06-09 12:00 (+14d) |  | 19.5d → 1d |  |  |
| 100 | Review + Update Test plan | 2016-05-26 13:00 → 2016-06-09 13:00 (+14d) | 2016-05-27 12:00 → 2016-06-10 12:00 (+14d) |  | 19.5d → 1d |  |  |
| 101 | Test plan approved | 2016-05-27 12:00 → 2016-06-10 12:00 (+14d) | 2016-05-27 12:00 → 2016-06-10 12:00 (+14d) |  | 19.5d → 20d |  |  |
| 103 | Create Integration Test Case | 2016-06-23 08:00 → 2016-06-20 13:00 (-3d) | 2016-06-24 17:00 → 2016-06-27 12:00 (+3d) | 2d → 5d | 33d → 1d |  | resources TestTeam → QuanNH |
| 104 | Update and review Integration Test Case | 2016-06-27 08:00 → 2016-06-27 13:00 | 2016-06-28 17:00 → 2016-06-29 12:00 (+1d) |  | 33d → 1d |  | resources DevTeam → MinhNN |
| 105 | Phase meeting | 2016-06-22 13:00 → 2016-06-01 13:00 (-21d) | 2016-06-22 17:00 → 2016-06-01 17:00 (-21d) |  | 2d → 20.5d |  |  |
| 107 | **Construction** | 2016-06-23 08:00 → 2016-06-29 12:00 (+6d) | 2016-08-18 17:00 → 2016-08-24 17:00 (+6d) | 41d → 40.5d |  |  |  |
| 108 | **Design** | 2016-06-23 08:00 → 2016-06-29 13:00 (+6d) | 2016-06-24 17:00 → 2016-07-01 12:00 (+7d) |  | 1d → 39.5d |  |  |
| 109 | Refine Design document | 2016-06-23 08:00 → 2016-06-29 13:00 (+6d) | 2016-06-24 17:00 → 2016-07-01 12:00 (+7d) |  | 1d → 39.5d |  | resources DevTeam → TungDT |
| 110 | **Coding** | 2016-06-27 08:00 → 2016-06-29 13:00 (+2d) | 2016-08-08 17:00 → 2016-08-01 12:00 (-7d) | 31d → 23d |  | 108 → 97 |  |
| 111 | **Coding product** | 2016-06-29 08:00 → 2016-06-29 13:00 | 2016-08-08 17:00 → 2016-08-01 12:00 (-7d) | 29d → 23d |  | 97 → none |  |
| 112 | **Coding Fronent Modules** | 2016-06-29 08:00 → 2016-06-29 13:00 | 2016-08-05 17:00 → 2016-07-20 12:00 (-16d) | 28d → 15d | 2d → 9d |  |  |
| 113 | **Core Module** | 2016-06-29 08:00 → 2016-06-29 13:00 | 2016-08-03 17:00 → 2016-07-20 12:00 (-14d) | 26d → 15d | 2d → 9d |  |  |
| 114 | Common module | 2016-06-29 08:00 → 2016-06-29 13:00 | 2016-06-30 17:00 → 2016-07-01 12:00 (+1d) |  | 2d → 9d |  | resources FrontendTeam → DuyNT |
| 115 | Authentication module | 2016-07-01 08:00 → 2016-07-01 13:00 | 2016-07-01 17:00 → 2016-07-04 12:00 (+3d) |  | 2d → 9d |  | resources FrontendTeam → DuyNT |
| 116 | Learning module | 2016-07-08 08:00 → 2016-07-04 13:00 (-4d) | 2016-07-19 17:00 → 2016-07-14 12:00 (-5d) |  | 2d → 9d | 118 → 115 | resources FrontendTeam → DuyNT |
| 117 | Examination module | 2016-07-26 08:00 → 2016-07-14 13:00 (-12d) | 2016-07-29 17:00 → 2016-07-20 12:00 (-9d) |  | 2d → 9d | 119 → 116 | resources FrontendTeam → DuyNT |
| 118 | Account Management module | 2016-07-04 08:00 → 2016-06-29 13:00 (-5d) | 2016-07-07 17:00 → 2016-07-05 12:00 (-2d) |  | 2d → 13d | 115 → 97 | resources FrontendTeam → ThangPD |
| 119 | Question Bank module | 2016-07-20 08:00 → 2016-07-05 13:00 (-15d) | 2016-07-25 17:00 → 2016-07-11 12:00 (-14d) |  | 2d → 13d | 116 → 118 | resources FrontendTeam → ThangPD |
| 120 | Content Reporting module | 2016-08-01 08:00 → 2016-07-11 13:00 (-21d) | 2016-08-01 17:00 → 2016-07-12 12:00 (-20d) |  | 2d → 13d | 117 → 119 | resources FrontendTeam → ThangPD |
| 121 | Statistic module | 2016-08-02 08:00 → 2016-07-12 13:00 (-21d) | 2016-08-03 17:00 → 2016-07-14 12:00 (-20d) |  | 2d → 13d |  | resources FrontendTeam → ThangPD |
| 122 | **Coding Backend Modules** | 2016-06-30 08:00 → 2016-06-29 13:00 (-1d) | 2016-08-08 17:00 → 2016-08-01 12:00 (-7d) | 28d → 23d |  | 97FS+1d → 97 |  |
| 123 | **Core Module** | 2016-06-30 08:00 → 2016-06-29 13:00 (-1d) | 2016-08-02 17:00 → 2016-08-01 12:00 (-1d) | 24d → 23d |  |  |  |
| 124 | Model Component | 2016-06-30 08:00 → 2016-06-29 13:00 (-1d) | 2016-07-01 17:00 → 2016-06-30 12:00 (-1d) | 2d → 1d |  |  | resources BackendTeam → LinhNH; TungDT |
| 125 | DAO Component | 2016-07-04 08:00 → 2016-06-30 13:00 (-4d) | 2016-07-07 17:00 → 2016-07-06 12:00 (-1d) |  |  |  | resources BackendTeam → LinhNH; TungDT |
| 126 | Service Component | 2016-07-08 08:00 → 2016-07-06 13:00 (-2d) | 2016-07-19 17:00 → 2016-07-18 12:00 (-1d) |  |  |  | resources BackendTeam → LinhNH; TungDT |
| 127 | Controller Component | 2016-07-20 08:00 → 2016-07-18 13:00 (-2d) | 2016-07-29 17:00 → 2016-07-28 12:00 (-1d) |  |  |  | resources BackendTeam → LinhNH; TungDT |
| 128 | Integrate components | 2016-08-01 08:00 → 2016-07-28 13:00 (-4d) | 2016-08-02 17:00 → 2016-08-01 12:00 (-1d) |  |  |  | resources BackendTeam → LinhNH; TungDT |
| 129 | Product development completes | 2016-08-08 17:00 → 2016-08-01 12:00 (-7d) | 2016-08-08 17:00 → 2016-08-01 12:00 (-7d) |  | 6d → 1d |  |  |
| 130 | **Testing** | 2016-06-23 08:00 → 2016-06-29 13:00 (+6d) | 2016-08-17 17:00 → 2016-08-12 12:00 (-5d) | 40d → 32d | 1d → 9.5d |  |  |
| 131 | **Writing Test cases (Continue)** | 2016-06-23 08:00 → 2016-06-29 13:00 (+6d) | 2016-07-04 17:00 → 2016-07-07 12:00 (+3d) | 8d → 6d | 33d → 35.5d |  |  |
| 132 | Create System Test Case | 2016-06-29 08:00 → 2016-06-29 13:00 | 2016-06-30 17:00 → 2016-07-05 12:00 (+5d) | 2d → 4d | 33d → 35.5d |  | resources TestTeam → QuanNH |
| 133 | Update and review System Test Case | 2016-07-01 08:00 → 2016-07-05 13:00 (+4d) | 2016-07-04 17:00 → 2016-07-07 12:00 (+3d) |  | 33d → 35.5d |  | resources DevTeam → MinhNN |
| 134 | Writing Test cases completes | 2016-07-04 17:00 → 2016-07-07 12:00 (+3d) | 2016-07-04 17:00 → 2016-07-07 12:00 (+3d) |  | 33d → 34.5d |  |  |
| 135 | **Execute Test** | 2016-08-09 08:00 → 2016-08-01 13:00 (-8d) | 2016-08-17 17:00 → 2016-08-12 12:00 (-5d) | 7d → 9d |  | 111 → 110 |  |
| 136 | **Execute Test Frontend** | 2016-08-09 08:00 → 2016-08-01 13:00 (-8d) | 2016-08-12 17:00 → 2016-08-05 12:00 (-7d) |  | 4d → 6d |  |  |
| 137 | Execute Integration Test | 2016-08-09 08:00 → 2016-08-01 13:00 (-8d) | 2016-08-10 17:00 → 2016-08-03 12:00 (-7d) |  | 4d → 6d |  | resources TestTeam → QuanNH |
| 138 | Fix bug Integration Test | 2016-08-11 08:00 → 2016-08-03 13:00 (-8d) | 2016-08-12 17:00 → 2016-08-05 12:00 (-7d) |  | 4d → 6d |  | resources DevTeam → DuyNT; ThangPD |
| 139 | **Execute Test Backend** | 2016-08-09 08:00 → 2016-08-01 13:00 (-8d) | 2016-08-12 17:00 → 2016-08-05 12:00 (-7d) |  |  |  |  |
| 140 | Execute Integration Test | 2016-08-09 08:00 → 2016-08-01 13:00 (-8d) | 2016-08-10 17:00 → 2016-08-03 12:00 (-7d) |  | 2d → 1d |  | resources TestTeam → QuanNH |
| 141 | Fix bug Integration Test | 2016-08-11 08:00 → 2016-08-03 13:00 (-8d) | 2016-08-12 17:00 → 2016-08-05 12:00 (-7d) |  | 4d → 6d |  | resources DevTeam → LinhNH; TungDT |
| 142 | Execute System Test | 2016-08-11 08:00 → 2016-08-03 13:00 (-8d) | 2016-08-12 17:00 → 2016-08-09 12:00 (-3d) | 2d → 4d |  |  | resources TestTeam → DuyNT; QuanNH |
| 143 | Fix bug System Test | 2016-08-15 08:00 → 2016-08-09 13:00 (-6d) | 2016-08-16 17:00 → 2016-08-11 12:00 (-5d) |  |  |  | resources DevTeam → LinhNH; ThangPD |
| 144 | Create Test Report first verstion | 2016-08-17 08:00 → 2016-08-11 13:00 (-6d) | 2016-08-17 17:00 → 2016-08-12 12:00 (-5d) |  |  |  | resources DocTeam → QuanNH |
| 145 | Complete Testing | 2016-08-17 17:00 → 2016-08-12 12:00 (-5d) | 2016-08-17 17:00 → 2016-08-12 12:00 (-5d) |  | 2d → 1d |  |  |
| 146 | **Manage development** | 2016-06-27 08:00 → 2016-06-29 13:00 (+2d) | 2016-07-01 17:00 → 2016-07-06 12:00 (+5d) |  | 35d → 36.5d |  |  |
| 147 | **Manage scope/cost/time** | 2016-06-27 08:00 → 2016-06-29 13:00 (+2d) | 2016-07-01 17:00 → 2016-07-06 12:00 (+5d) |  | 35d → 36.5d |  |  |
| 148 | Monitor product changes | 2016-06-27 08:00 → 2016-06-29 13:00 (+2d) | 2016-07-01 17:00 → 2016-07-06 12:00 (+5d) |  | 35d → 33.5d |  |  |
| 149 | Monitor project changes | 2016-06-27 08:00 → 2016-06-29 13:00 (+2d) | 2016-07-01 17:00 → 2016-07-06 12:00 (+5d) |  | 35d → 33.5d |  |  |
| 150 | **Manage communications** | 2016-06-27 08:00 → 2016-06-29 13:00 (+2d) | 2016-06-27 17:00 → 2016-06-30 12:00 (+3d) |  | 39d → 40.5d |  |  |
| 151 | **Implement communications methods and strategies** | 2016-06-27 08:00 → 2016-06-29 13:00 (+2d) | 2016-06-27 17:00 → 2016-06-30 12:00 (+3d) |  | 39d → 40.5d |  |  |
| 152 | Select tools | 2016-06-27 08:00 → 2016-06-29 13:00 (+2d) | 2016-06-27 17:00 → 2016-06-30 12:00 (+3d) |  | 39d → 37.5d |  |  |
| 153 | **Distribute information** | 2016-06-27 08:00 → 2016-06-29 13:00 (+2d) | 2016-06-27 17:00 → 2016-06-30 12:00 (+3d) |  | 39d → 40.5d |  |  |
| 154 | Attend team meeting | 2016-06-27 08:00 → 2016-06-29 13:00 (+2d) | 2016-06-27 17:00 → 2016-06-30 12:00 (+3d) |  | 39d → 37.5d |  |  |
| 155 | Create status reports | 2016-06-27 08:00 → 2016-06-29 13:00 (+2d) | 2016-06-27 17:00 → 2016-06-30 12:00 (+3d) |  | 39d → 37.5d |  |  |
| 156 | Create Weekly Report | 2016-06-27 08:00 → 2016-06-29 13:00 (+2d) | 2016-06-27 17:00 → 2016-06-30 12:00 (+3d) |  | 39d → 37.5d |  |  |
| 157 | Resolve communications problems | 2016-06-27 08:00 → 2016-06-29 13:00 (+2d) | 2016-06-27 17:00 → 2016-06-30 12:00 (+3d) |  | 39d → 37.5d |  |  |
| 158 | **Manage quality control** | 2016-06-27 08:00 → 2016-06-29 13:00 (+2d) | 2016-06-27 17:00 → 2016-06-30 12:00 (+3d) |  | 39d → 40.5d |  |  |
| 159 | Monitor product quality | 2016-06-27 08:00 → 2016-06-29 13:00 (+2d) | 2016-06-27 17:00 → 2016-06-30 12:00 (+3d) |  | 39d → 37.5d |  |  |
| 160 | **Monitor project quality** | 2016-06-27 08:00 → 2016-06-29 13:00 (+2d) | 2016-06-27 17:00 → 2016-06-30 12:00 (+3d) |  | 39d → 40.5d |  |  |
| 161 | Implement process improvements | 2016-06-27 08:00 → 2016-06-29 13:00 (+2d) | 2016-06-27 17:00 → 2016-06-30 12:00 (+3d) |  | 39d → 37.5d |  |  |
| 162 | **Manage risk** | 2016-06-27 08:00 → 2016-06-29 13:00 (+2d) | 2016-06-27 17:00 → 2016-06-30 12:00 (+3d) |  | 39d → 40.5d |  |  |
| 163 | Monitor risks | 2016-06-27 08:00 → 2016-06-29 13:00 (+2d) | 2016-06-27 17:00 → 2016-06-30 12:00 (+3d) |  | 39d → 37.5d |  |  |
| 164 | Specify responses | 2016-06-27 08:00 → 2016-06-29 13:00 (+2d) | 2016-06-27 17:00 → 2016-06-30 12:00 (+3d) |  | 39d → 37.5d |  |  |
| 165 | Manage integration | 2016-06-27 08:00 → 2016-06-29 13:00 (+2d) | 2016-06-27 17:00 → 2016-06-30 12:00 (+3d) |  | 39d → 37.5d |  |  |
| 166 | **User Manual** | 2016-08-09 08:00 → 2016-08-01 13:00 (-8d) | 2016-08-11 17:00 → 2016-08-17 12:00 (+6d) | 3d → 12d | 6d → 1d |  |  |
| 167 | Create Installation guideline | 2016-08-09 08:00 → 2016-08-01 13:00 (-8d) | 2016-08-09 17:00 → 2016-08-02 12:00 (-7d) |  | 6d → 12d |  | resources DocTeam → TungDT |

| ID | Task | Start | Finish | Duration | Total float | Predecessors | Other |
| --- | --- | --- | --- | --- | --- | --- | --- |
| 168 | Create User guideline | 2016-08-09 08:00 → 2016-08-12 13:00 (+3d) | 2016-08-10 17:00 → 2016-08-16 12:00 (+6d) |  | 6d → 1d | 167SS → 135 | resources DocTeam → QuanNH |
| 169 | Review + Update guidelines | 2016-08-11 08:00 → 2016-08-16 13:00 (+5d) | 2016-08-11 17:00 → 2016-08-17 12:00 (+6d) |  | 6d → 1d |  |  |
| 170 | **Create final report + CD** | 2016-08-18 13:00 → 2016-08-17 13:00 (-1d) | 2016-08-18 17:00 → 2016-08-24 12:00 (+6d) | 0.5d → 5d |  | 174 → 166 |  |
| 174 | Phase meeting | 2016-08-18 08:00 → 2016-08-24 13:00 (+6d) | 2016-08-18 12:00 → 2016-08-24 17:00 (+6d) |  |  | 130 → 170 |  |
| 176 | **Termination** | 2016-08-19 08:00 → 2016-08-25 08:00 (+6d) | 2016-08-25 17:00 → 2016-09-01 17:00 (+7d) | 5d → 6d | 1d → 0d |  |  |
| 177 | **Pre-Closing** | 2016-08-19 08:00 → 2016-08-25 08:00 (+6d) | 2016-08-22 17:00 → 2016-08-29 17:00 (+7d) | 2d → 3d |  |  |  |
| 178 | Training presentation | 2016-08-19 08:00 → 2016-08-25 08:00 (+6d) | 2016-08-22 17:00 → 2016-08-29 17:00 (+7d) | 2d → 3d |  |  |  |
| 179 | **Closing** | 2016-08-23 08:00 → 2016-08-30 08:00 (+7d) | 2016-08-25 17:00 → 2016-09-01 17:00 (+7d) |  | 1d → 0d |  |  |
| 180 | Prepare for presentation | 2016-08-23 08:00 → 2016-08-30 08:00 (+7d) | 2016-08-24 17:00 → 2016-08-31 17:00 (+7d) |  |  |  |  |
| 181 | Represent Capstone Project and Completed | 2016-08-25 08:00 → 2016-09-01 08:00 (+7d) | 2016-08-25 17:00 → 2016-09-01 17:00 (+7d) |  | 1d → 0d | 180 → none | constraint finish no earlier than 2015-08-26 17:00 → start no earlier than 2016-09-01 08:00 |

## Version 4 (saved 2016-08-22)

Note of the change: Merge branch 'master' of https://github.com/sangnvus/201605JS01

Last finish stays 2016-09-01.

Changed:

| ID | Task | Start | Finish | Total float | Predecessors |
| --- | --- | --- | --- | --- | --- |
| 107 | **Construction** | 2016-06-29 12:00 → 2016-06-29 13:00 |  |  |  |
| 175 | Finish Construction Phase | 2016-06-29 12:00 → 2016-08-24 17:00 (+56d) | 2016-06-29 12:00 → 2016-08-24 17:00 (+56d) | 41.5d → 1d | none → 174 |

## Version 5 (saved 2016-08-23)

Note of the change: Update plan

Last finish 2016-09-01 → 2016-08-24 (-8d).

Changed:

| ID | Task | Start | Finish | Duration | Total float |
| --- | --- | --- | --- | --- | --- |
| 1 | **Veazy** |  | 2016-09-01 17:00 → 2016-08-24 17:00 (-8d) | 84d → 78d |  |
| 57 | **Solution** |  | 2016-06-29 12:00 → 2016-06-28 12:00 (-1d) | 25d → 24d | 1d → 0d |
| 98 | **Test** |  | 2016-06-29 12:00 → 2016-06-28 12:00 (-1d) | 15d → 14d | 1d → 0d |
| 102 | **Writing Test cases** |  | 2016-06-29 12:00 → 2016-06-28 12:00 (-1d) | 7d → 6d | 1d → 0d |
| 103 | Create Integration Test Case |  | 2016-06-27 12:00 → 2016-06-24 12:00 (-3d) | 5d → 4d | 1d → 0d |
| 104 | Update and review Integration Test Case | 2016-06-27 13:00 → 2016-06-24 13:00 (-3d) | 2016-06-29 12:00 → 2016-06-28 12:00 (-1d) |  | 1d → 0d |
| 107 | **Construction** | 2016-06-29 13:00 → 2016-06-28 13:00 (-1d) | 2016-08-24 17:00 → 2016-08-17 17:00 (-7d) | 40.5d → 36.5d | 1d → 0d |
| 108 | **Design** | 2016-06-29 13:00 → 2016-06-28 13:00 (-1d) | 2016-07-01 12:00 → 2016-06-30 12:00 (-1d) |  | 39.5d → 34.5d |
| 109 | Refine Design document | 2016-06-29 13:00 → 2016-06-28 13:00 (-1d) | 2016-07-01 12:00 → 2016-06-30 12:00 (-1d) |  | 39.5d → 34.5d |
| 110 | **Coding** | 2016-06-29 13:00 → 2016-06-28 13:00 (-1d) | 2016-08-01 12:00 → 2016-07-29 12:00 (-3d) |  | 1d → 0d |
| 111 | **Coding product** | 2016-06-29 13:00 → 2016-06-28 13:00 (-1d) | 2016-08-01 12:00 → 2016-07-29 12:00 (-3d) |  | 1d → 0d |
| 112 | **Coding Fronent Modules** | 2016-06-29 13:00 → 2016-06-28 13:00 (-1d) | 2016-07-20 12:00 → 2016-07-19 12:00 (-1d) |  | 9d → 8d |
| 113 | **Core Module** | 2016-06-29 13:00 → 2016-06-28 13:00 (-1d) | 2016-07-20 12:00 → 2016-07-19 12:00 (-1d) |  | 9d → 8d |
| 114 | Common module | 2016-06-29 13:00 → 2016-06-28 13:00 (-1d) | 2016-07-01 12:00 → 2016-06-30 12:00 (-1d) |  | 9d → 8d |
| 115 | Authentication module | 2016-07-01 13:00 → 2016-06-30 13:00 (-1d) | 2016-07-04 12:00 → 2016-07-01 12:00 (-3d) |  | 9d → 8d |
| 116 | Learning module | 2016-07-04 13:00 → 2016-07-01 13:00 (-3d) | 2016-07-14 12:00 → 2016-07-13 12:00 (-1d) |  | 9d → 8d |
| 117 | Examination module | 2016-07-14 13:00 → 2016-07-13 13:00 (-1d) | 2016-07-20 12:00 → 2016-07-19 12:00 (-1d) |  | 9d → 8d |
| 118 | Account Management module | 2016-06-29 13:00 → 2016-06-28 13:00 (-1d) | 2016-07-05 12:00 → 2016-07-04 12:00 (-1d) |  | 13d → 12d |
| 119 | Question Bank module | 2016-07-05 13:00 → 2016-07-04 13:00 (-1d) | 2016-07-11 12:00 → 2016-07-08 12:00 (-3d) |  | 13d → 12d |
| 120 | Content Reporting module | 2016-07-11 13:00 → 2016-07-08 13:00 (-3d) | 2016-07-12 12:00 → 2016-07-11 12:00 (-1d) |  | 13d → 12d |
| 121 | Statistic module | 2016-07-12 13:00 → 2016-07-11 13:00 (-1d) | 2016-07-14 12:00 → 2016-07-13 12:00 (-1d) |  | 13d → 12d |
| 122 | **Coding Backend Modules** | 2016-06-29 13:00 → 2016-06-28 13:00 (-1d) | 2016-08-01 12:00 → 2016-07-29 12:00 (-3d) |  | 1d → 0d |
| 123 | **Core Module** | 2016-06-29 13:00 → 2016-06-28 13:00 (-1d) | 2016-08-01 12:00 → 2016-07-29 12:00 (-3d) |  | 1d → 0d |
| 124 | Model Component | 2016-06-29 13:00 → 2016-06-28 13:00 (-1d) | 2016-06-30 12:00 → 2016-06-29 12:00 (-1d) |  | 1d → 0d |
| 125 | DAO Component | 2016-06-30 13:00 → 2016-06-29 13:00 (-1d) | 2016-07-06 12:00 → 2016-07-05 12:00 (-1d) |  | 1d → 0d |
| 126 | Service Component | 2016-07-06 13:00 → 2016-07-05 13:00 (-1d) | 2016-07-18 12:00 → 2016-07-15 12:00 (-3d) |  | 1d → 0d |
| 127 | Controller Component | 2016-07-18 13:00 → 2016-07-15 13:00 (-3d) | 2016-07-28 12:00 → 2016-07-27 12:00 (-1d) |  | 1d → 0d |
| 128 | Integrate components | 2016-07-28 13:00 → 2016-07-27 13:00 (-1d) | 2016-08-01 12:00 → 2016-07-29 12:00 (-3d) |  | 1d → 0d |
| 129 | Product development completes | 2016-08-01 12:00 → 2016-07-29 12:00 (-3d) | 2016-08-01 12:00 → 2016-07-29 12:00 (-3d) |  | 1d → 0d |
| 130 | **Testing** | 2016-06-29 13:00 → 2016-06-28 13:00 (-1d) | 2016-08-12 12:00 → 2016-08-05 12:00 (-7d) | 32d → 28d | 9.5d → 8.5d |
| 131 | **Writing Test cases (Continue)** | 2016-06-29 13:00 → 2016-06-28 13:00 (-1d) | 2016-07-07 12:00 → 2016-07-06 12:00 (-1d) |  | 35.5d → 30.5d |
| 132 | Create System Test Case | 2016-06-29 13:00 → 2016-06-28 13:00 (-1d) | 2016-07-05 12:00 → 2016-07-04 12:00 (-1d) |  | 35.5d → 30.5d |
| 133 | Update and review System Test Case | 2016-07-05 13:00 → 2016-07-04 13:00 (-1d) | 2016-07-07 12:00 → 2016-07-06 12:00 (-1d) |  | 35.5d → 30.5d |
| 134 | Writing Test cases completes | 2016-07-07 12:00 → 2016-07-06 12:00 (-1d) | 2016-07-07 12:00 → 2016-07-06 12:00 (-1d) |  | 34.5d → 30.5d |
| 135 | **Execute Test** | 2016-08-01 13:00 → 2016-07-29 13:00 (-3d) | 2016-08-12 12:00 → 2016-08-05 12:00 (-7d) | 9d → 5d | 1d → 0d |
| 136 | **Execute Test Frontend** | 2016-08-01 13:00 → 2016-07-29 13:00 (-3d) | 2016-08-05 12:00 → 2016-08-02 12:00 (-3d) | 4d → 2d | 6d → 3d |
| 137 | Execute Integration Test | 2016-08-01 13:00 → 2016-07-29 13:00 (-3d) | 2016-08-03 12:00 → 2016-08-01 12:00 (-2d) | 2d → 1d | 6d → 3d |
| 138 | Fix bug Integration Test | 2016-08-03 13:00 → 2016-08-01 13:00 (-2d) | 2016-08-05 12:00 → 2016-08-02 12:00 (-3d) | 2d → 1d | 6d → 3d |
| 139 | **Execute Test Backend** | 2016-08-01 13:00 → 2016-07-29 13:00 (-3d) | 2016-08-05 12:00 → 2016-08-02 12:00 (-3d) | 4d → 2d | 1d → 0d |
| 140 | Execute Integration Test | 2016-08-01 13:00 → 2016-07-29 13:00 (-3d) | 2016-08-03 12:00 → 2016-08-01 12:00 (-2d) | 2d → 1d | 1d → 0d |
| 141 | Fix bug Integration Test | 2016-08-03 13:00 → 2016-08-01 13:00 (-2d) | 2016-08-05 12:00 → 2016-08-02 12:00 (-3d) | 2d → 1d | 6d → 3d |
| 142 | Execute System Test | 2016-08-03 13:00 → 2016-08-01 13:00 (-2d) | 2016-08-09 12:00 → 2016-08-03 12:00 (-6d) | 4d → 2d | 1d → 0d |
| 143 | Fix bug System Test | 2016-08-09 13:00 → 2016-08-03 13:00 (-6d) | 2016-08-11 12:00 → 2016-08-04 12:00 (-7d) | 2d → 1d | 1d → 0d |
| 144 | Create Test Report first verstion | 2016-08-11 13:00 → 2016-08-04 13:00 (-7d) | 2016-08-12 12:00 → 2016-08-05 12:00 (-7d) |  | 1d → 0d |
| 145 | Complete Testing | 2016-08-12 12:00 → 2016-08-05 12:00 (-7d) | 2016-08-12 12:00 → 2016-08-05 12:00 (-7d) |  | 1d → 0d |
| 146 | **Manage development** | 2016-06-29 13:00 → 2016-06-28 13:00 (-1d) | 2016-07-06 12:00 → 2016-07-05 12:00 (-1d) |  | 36.5d → 31.5d |
| 147 | **Manage scope/cost/time** | 2016-06-29 13:00 → 2016-06-28 13:00 (-1d) | 2016-07-06 12:00 → 2016-07-05 12:00 (-1d) |  | 36.5d → 31.5d |
| 148 | Monitor product changes | 2016-06-29 13:00 → 2016-06-28 13:00 (-1d) | 2016-07-06 12:00 → 2016-07-05 12:00 (-1d) |  | 33.5d → 31.5d |
| 149 | Monitor project changes | 2016-06-29 13:00 → 2016-06-28 13:00 (-1d) | 2016-07-06 12:00 → 2016-07-05 12:00 (-1d) |  | 33.5d → 31.5d |
| 150 | **Manage communications** | 2016-06-29 13:00 → 2016-06-28 13:00 (-1d) | 2016-06-30 12:00 → 2016-06-29 12:00 (-1d) |  | 40.5d → 35.5d |
| 151 | **Implement communications methods and strategies** | 2016-06-29 13:00 → 2016-06-28 13:00 (-1d) | 2016-06-30 12:00 → 2016-06-29 12:00 (-1d) |  | 40.5d → 35.5d |
| 152 | Select tools | 2016-06-29 13:00 → 2016-06-28 13:00 (-1d) | 2016-06-30 12:00 → 2016-06-29 12:00 (-1d) |  | 37.5d → 35.5d |
| 153 | **Distribute information** | 2016-06-29 13:00 → 2016-06-28 13:00 (-1d) | 2016-06-30 12:00 → 2016-06-29 12:00 (-1d) |  | 40.5d → 35.5d |
| 154 | Attend team meeting | 2016-06-29 13:00 → 2016-06-28 13:00 (-1d) | 2016-06-30 12:00 → 2016-06-29 12:00 (-1d) |  | 37.5d → 35.5d |
| 155 | Create status reports | 2016-06-29 13:00 → 2016-06-28 13:00 (-1d) | 2016-06-30 12:00 → 2016-06-29 12:00 (-1d) |  | 37.5d → 35.5d |
| 156 | Create Weekly Report | 2016-06-29 13:00 → 2016-06-28 13:00 (-1d) | 2016-06-30 12:00 → 2016-06-29 12:00 (-1d) |  | 37.5d → 35.5d |
| 157 | Resolve communications problems | 2016-06-29 13:00 → 2016-06-28 13:00 (-1d) | 2016-06-30 12:00 → 2016-06-29 12:00 (-1d) |  | 37.5d → 35.5d |
| 158 | **Manage quality control** | 2016-06-29 13:00 → 2016-06-28 13:00 (-1d) | 2016-06-30 12:00 → 2016-06-29 12:00 (-1d) |  | 40.5d → 35.5d |
| 159 | Monitor product quality | 2016-06-29 13:00 → 2016-06-28 13:00 (-1d) | 2016-06-30 12:00 → 2016-06-29 12:00 (-1d) |  | 37.5d → 35.5d |
| 160 | **Monitor project quality** | 2016-06-29 13:00 → 2016-06-28 13:00 (-1d) | 2016-06-30 12:00 → 2016-06-29 12:00 (-1d) |  | 40.5d → 35.5d |
| 161 | Implement process improvements | 2016-06-29 13:00 → 2016-06-28 13:00 (-1d) | 2016-06-30 12:00 → 2016-06-29 12:00 (-1d) |  | 37.5d → 35.5d |
| 162 | **Manage risk** | 2016-06-29 13:00 → 2016-06-28 13:00 (-1d) | 2016-06-30 12:00 → 2016-06-29 12:00 (-1d) |  | 40.5d → 35.5d |
| 163 | Monitor risks | 2016-06-29 13:00 → 2016-06-28 13:00 (-1d) | 2016-06-30 12:00 → 2016-06-29 12:00 (-1d) |  | 37.5d → 35.5d |
| 164 | Specify responses | 2016-06-29 13:00 → 2016-06-28 13:00 (-1d) | 2016-06-30 12:00 → 2016-06-29 12:00 (-1d) |  | 37.5d → 35.5d |
| 165 | Manage integration | 2016-06-29 13:00 → 2016-06-28 13:00 (-1d) | 2016-06-30 12:00 → 2016-06-29 12:00 (-1d) |  | 37.5d → 35.5d |
| 166 | **User Manual** | 2016-08-01 13:00 → 2016-07-29 13:00 (-3d) | 2016-08-17 12:00 → 2016-08-10 12:00 (-7d) | 12d → 8d | 1d → 0d |
| 167 | Create Installation guideline | 2016-08-01 13:00 → 2016-07-29 13:00 (-3d) | 2016-08-02 12:00 → 2016-08-01 12:00 (-1d) |  | 12d → 7d |
| 168 | Create User guideline | 2016-08-12 13:00 → 2016-08-05 13:00 (-7d) | 2016-08-16 12:00 → 2016-08-09 12:00 (-7d) |  | 1d → 0d |
| 169 | Review + Update guidelines | 2016-08-16 13:00 → 2016-08-09 13:00 (-7d) | 2016-08-17 12:00 → 2016-08-10 12:00 (-7d) |  | 1d → 0d |
| 170 | **Create final report + CD** | 2016-08-17 13:00 → 2016-08-10 13:00 (-7d) | 2016-08-24 12:00 → 2016-08-17 12:00 (-7d) |  | 1d → 0d |

| ID | Task | Start | Finish | Duration | Total float | Predecessors | Other |
| --- | --- | --- | --- | --- | --- | --- | --- |
| 171 | Create presentation slide | 2016-08-17 13:00 → 2016-08-10 13:00 (-7d) | 2016-08-18 12:00 → 2016-08-11 12:00 (-7d) |  | 5d → 4d |  |  |
| 172 | Create final report | 2016-08-17 13:00 → 2016-08-10 13:00 (-7d) | 2016-08-23 12:00 → 2016-08-16 12:00 (-7d) |  | 1d → 0d |  |  |
| 173 | Write CD + Print documents | 2016-08-23 13:00 → 2016-08-16 13:00 (-7d) | 2016-08-24 12:00 → 2016-08-17 12:00 (-7d) |  | 1d → 0d |  |  |
| 174 | Phase meeting | 2016-08-24 13:00 → 2016-08-17 13:00 (-7d) | 2016-08-24 17:00 → 2016-08-17 17:00 (-7d) |  | 1d → 0d |  |  |
| 175 | Finish Construction Phase | 2016-08-24 17:00 → 2016-08-17 17:00 (-7d) | 2016-08-24 17:00 → 2016-08-17 17:00 (-7d) |  | 1d → 0d |  |  |
| 176 | **Termination** | 2016-08-25 08:00 → 2016-08-18 08:00 (-7d) | 2016-09-01 17:00 → 2016-08-24 17:00 (-8d) | 6d → 5d |  |  |  |
| 177 | **Pre-Closing** | 2016-08-25 08:00 → 2016-08-18 08:00 (-7d) | 2016-08-29 17:00 → 2016-08-19 17:00 (-10d) | 3d → 2d | 1d → 0d |  |  |
| 178 | Training presentation | 2016-08-25 08:00 → 2016-08-18 08:00 (-7d) | 2016-08-29 17:00 → 2016-08-19 17:00 (-10d) | 3d → 2d | 1d → 0d |  |  |
| 179 | **Closing** | 2016-08-30 08:00 → 2016-08-22 08:00 (-8d) | 2016-09-01 17:00 → 2016-08-24 17:00 (-8d) |  |  |  |  |
| 180 | Prepare for presentation | 2016-08-30 08:00 → 2016-08-22 08:00 (-8d) | 2016-08-31 17:00 → 2016-08-23 17:00 (-8d) |  | 1d → 0d |  |  |
| 181 | Represent Capstone Project and Completed | 2016-09-01 08:00 → 2016-08-24 08:00 (-8d) | 2016-09-01 17:00 → 2016-08-24 17:00 (-8d) |  |  | none → 180 | constraint start no earlier than 2016-09-01 08:00 → none |
| 182 | Finish Capstone Project | 2016-09-01 17:00 → 2016-08-24 17:00 (-8d) | 2016-09-01 17:00 → 2016-08-24 17:00 (-8d) |  |  |  |  |
